# EDT_Proyecto_grado_v5

Schedule from MS Project, 2019-01-02 to 2021-01-05, costs in $.

## Calendars

- Estándar: Mon-Fri 09:00-13:00, 15:00-19:00; Sat-Sun off.

## Resources

| Resource | Group | Rate |
| --- | --- | --- |
| Gerente de proyectos | Personal administrativo | 50000 |
| Jefe de talento humano | Personal administrativo | 14583 |
| Jefe de calidad | Personal administrativo | 14583 |
| Director administrativo | Personal administrativo | 25000 |
| Auxiliar contable | Personal administrativo | 3074 |
| Director de obra | Personal de obra | 20000 |
| Residente de obra | Personal de obra | 14583 |
| Jefe de ingenieria | Personal de obra | 14583 |
| Tecnólogo civil | Personal de obra | 12000 |
| Ayudante de obra | Personal de obra | 3074 |
| Ayudante electricista | Personal de obra | 4167 |
| Ayudante de almacen | Personal de obra | 7083 |
| Retroexcavadora | Maquinaria |  |
| Volqueta | Maquinaria |  |
| Piloteadora | Maquinaria |  |
| Mezcladora de concreto | Maquinaria |  |
| Herramienta menor | Maquinaria |  |
| Grúa telescopica | Maquinaria |  |
| Motobomba | Maquinaria |  |
| Software | Administrativo |  |
| Dotación oficina administrativa | Administrativo |  |
| Equipos de cómputo | Administrativo | 210 |
| Equipos celulares | Gerencia de proyectos | 138 |
| Impresora | Gerencia de proyectos | 350 |
| Estudios técnicos de materiales | Administrativo |  |
| Proveedor de servicios de consultoria de obra civil, eléctrica o especial |  |  |
| Asesor jurídico |  |  |
| Proveedor de sistema de carrusel | Proveedores |  |
| Proveedor de sistema de control de acceso | Proveedores |  |
| Proveedor de sistema digital de facturación | Proveedores |  |
| Proveedor de sistema automatizado de parqueo | Proveedores |  |
| Proveedor de sistemas de alarmas y seguridad | Proveedores |  |
| Proveedor de UPS | Proveedores |  |
| Proveedor sistema red contraincendios | Proveedores |  |
| Modulo de carrusel 16 plazas |  | 300000000 |
| Tecnólogo de sistemas | Personal de obra | 12000 |
| Tecnólogo electromecánico | Personal de obra | 12000 |
| Proveedor de servicios de consultoría en HSEQ | Proveedores |  |
| Proveedor carpinteria metalica | Proveedores |  |
| Proveedor cableado y telecomunicaciones | Proveedores |  |
| Sistema operativo |  | 35 |
| Microsoft office |  | 125 |

## Schedule

| ID | WBS | Task | Duration | Start | Finish | Predecessors | Total slack | Free slack | Resources | Work | Cost |
| --- | --- | --- | --- | --- | --- | --- | --- | --- | --- | --- | --- |
| 1 | 1 | **SISTEMA DE ESTACIONAMIENTO VERTICAL ROTATORIO AUTOMATIZADO PARA EL HOTEL BLACK TOWER – BOGOTÁ.** | 524.88d | 2019-01-02 09:00 | 2021-01-05 18:00 |  | 0d |  |  | 10768.5h | 1,497,303,003.09 |
| 2 | 1.1 | **DIAGNÓSTICO** | 53.38d | 2019-07-17 09:00 | 2019-09-30 12:00 | 516 | 0.12d | 0d |  | 157.39h | 14,277,723.02 |
| 3 | 1.1.1 | **Requisitos** | 24.12d | 2019-07-17 09:00 | 2019-08-20 10:00 | 242 | 0.12d | 0d |  | 114.25h | 9,824,830.5 |
| 4 | 1.1.1.1 | **Anteproyecto** | 18.75d | 2019-07-17 09:00 | 2019-08-12 17:00 | 242 | 2.75d | 0d |  | 41.62h | 953,380.5 |
| 5 | 1.1.1.1.1 | Análisis del entorno, hitos y nodos | 10h | 2019-07-17 09:00 | 2019-07-18 11:00 | 242 | 2.75d | 0d | Director administrativo [9%]; Director de obra [16%]; Gerente de proyectos [25%]; Dotación oficina administrativa [0.1%]; Equipos celulares; Equipos de cómputo; Impresora; Software [0.1%] | 3.51h | 151,058 |
| 6 | 1.1.1.1.2 | Plan de manejo de tráfico | 10h | 2019-07-29 15:00 | 2019-08-12 17:00 | 14 | 2.75d |  | Director de obra [16%]; Residente de obra; Dotación oficina administrativa [0.1%]; Equipos celulares; Equipos de cómputo; Impresora; Software [0.1%] | 11.6h | 179,728 |
| 7 | 1.1.1.1.3 | Actas de vecindad | 16h | 2019-07-18 11:00 | 2019-07-22 11:00 | 5 | 2.75d | 0d | Residente de obra; Equipos de cómputo; Impresora; Equipos celulares | 16h | 234,026 |
| 8 | 1.1.1.1.4 | Levantamiento del terreno | 2h | 2019-07-22 11:00 | 2019-07-22 13:00 | 7 | 2.75d | 0d | Proveedor de servicios de consultoria de obra civil, eléctrica o especial [0.1%]; Dotación oficina administrativa [0.1%]; Equipos de cómputo; Software [0.1%]; Equipos celulares |  | 100,588 |
| 9 | 1.1.1.1.5 | Evaluación de elementos a conservar | 2h | 2019-07-22 15:00 | 2019-07-22 17:00 | 8 | 2.75d | 0d | Director de obra [20%]; Equipos de cómputo; Impresora; Software [0.1%]; Equipos celulares | 0.4h | 8,938 |
| 10 | 1.1.1.1.6 | Evaluación de posibilidades de acceso | 3h | 2019-07-22 17:00 | 2019-07-23 10:00 | 9 | 2.75d | 0d | Director administrativo [12%]; Director de obra [20%]; Gerente de proyectos [15%]; Equipos de cómputo; Impresora; Software [0.1%]; Equipos celulares | 1.29h | 42,158 |
| 11 | 1.1.1.1.7 | Zonificación de áreas requeridas | 2h | 2019-07-23 10:00 | 2019-07-23 12:00 | 10 | 2.75d | 0d | Proveedor de servicios de consultoria de obra civil, eléctrica o especial [0.1%]; Equipos celulares |  | 14,138 |
| 12 | 1.1.1.1.8 | Análisis de requerimientos para implantación de Carrusel | 10h | 2019-07-23 12:00 | 2019-07-25 17:00 | 11 | 2.75d | 0d | Director de obra [10%]; Jefe de ingenieria [75%]; Dotación oficina administrativa [0.1%]; Equipos celulares; Equipos de cómputo; Impresora; Software [0.1%] | 8.5h | 131,270.5 |
| 13 | 1.1.1.1.9 | Planteamiento arquitectónico inicial | 12h | 2019-07-25 17:00 | 2019-07-29 11:00 | 12 | 2.75d | 0d | Proveedor de servicios de consultoria de obra civil, eléctrica o especial [0.1%]; Equipos celulares |  | 84,138 |
| 14 | 1.1.1.1.10 | Plan para demolición de estructura existente | 2h | 2019-07-29 11:00 | 2019-07-29 13:00 | 13 | 2.75d | 0d | Director de obra [16%]; Dotación oficina administrativa [0.1%]; Equipos de cómputo; Impresora; Software [0.1%]; Equipos celulares | 0.32h | 7,338 |
| 15 | 1.1.1.2 | **Estudios de suelos** | 2.75d | 2019-08-12 17:00 | 2019-08-15 13:00 | 4 | 2.75d |  |  |  | 542,414 |
| 16 | 1.1.1.2.1 | Ensayos de campo (Sondeos) | 8h | 2019-08-12 17:00 | 2019-08-13 17:00 | 235 | 2.75d | 0d | Estudios técnicos de materiales [0.1%]; Equipos celulares |  | 250,138 |
| 17 | 1.1.1.2.2 | Análisis de laboratorio | 8h | 2019-08-13 17:00 | 2019-08-14 17:00 | 16 | 2.75d | 0d | Estudios técnicos de materiales [0.1%]; Equipos celulares |  | 250,138 |
| 18 | 1.1.1.2.3 | Análisis de capacidad portante del suelo | 6h | 2019-08-14 17:00 | 2019-08-15 13:00 | 17 | 2.75d |  | Proveedor de servicios de consultoria de obra civil, eléctrica o especial [0.1%]; Equipos celulares |  | 42,138 |
| 19 | 1.1.1.3 | **Estudios Topográficos** | 1d | 2019-08-12 17:00 | 2019-08-13 17:00 | 4 | 4.5d |  |  |  | 56,414 |
| 20 | 1.1.1.3.1 | Mediciones y levantamiento topográfico | 2h | 2019-08-12 17:00 | 2019-08-12 19:00 | 4 | 4.5d | 0d | Proveedor de servicios de consultoria de obra civil, eléctrica o especial [0.1%]; Equipos celulares |  | 14,138 |
| 21 | 1.1.1.3.2 | Estudio de viabilidad y trazado de estructura | 2h | 2019-08-13 09:00 | 2019-08-13 11:00 | 20 | 4.5d | 0d | Proveedor de servicios de consultoria de obra civil, eléctrica o especial [0.1%]; Equipos celulares |  | 14,138 |
| 22 | 1.1.1.3.3 | Plano topográfico | 4h | 2019-08-13 11:00 | 2019-08-13 17:00 | 21 | 4.5d |  | Proveedor de servicios de consultoria de obra civil, eléctrica o especial [0.1%]; Equipos celulares |  | 28,138 |
| 23 | 1.1.1.4 | **Documentos y trámites** | 23.12d | 2019-07-17 09:00 | 2019-08-19 10:00 | 242 | 0.12d | 0d |  | 67.83h | 8,122,352 |
| 24 | 1.1.1.4.1 | Análisis de normatividad aplicable en el sector y solicitud de viabilidad de cobertura de servicios públicos en la curaduría | 8h | 2019-07-17 09:00 | 2019-07-17 19:00 | 242 | 0.12d | 0d | Director de obra [16%]; Director administrativo [9%]; Equipos de cómputo; Software [0.1%] | 1.34h | 28,370 |
| 25 | 1.1.1.4.2 | Certificado de uso del suelo | 1h | 2019-07-17 09:00 | 2019-07-17 10:00 | 24SS | 0.12d | 0d | Director administrativo [9%]; Equipos de cómputo | 0.09h | 2,460 |
| 26 | 1.1.1.4.3 | Recopilar documentación necesaria para trámites ante Curaduría y entes de control | 24h | 2019-07-17 10:00 | 2019-07-22 10:00 | 25 | 0.12d | 0d | Auxiliar contable; Equipos de cómputo | 24h | 73,986 |
| 27 | 1.1.1.4.4 | Tramitar licencia de construcción | 10d | 2019-07-22 10:00 | 2019-08-05 10:00 | 26 | 0.12d | 0d | Proveedor de servicios de consultoria de obra civil, eléctrica o especial [0.1%]; Equipos de cómputo |  | 1,680,210 |
| 28 | 1.1.1.4.5 | Trámites ante otros entes reguladores | 20d | 2019-07-22 10:00 | 2019-08-19 10:00 | 27SS | 0.12d | 0d | Proveedor de servicios de consultoria de obra civil, eléctrica o especial [0.1%]; Equipos de cómputo |  | 3,360,210 |
| 29 | 1.1.1.4.6 | Trámites y gestiones del servicio y acometida provisional de Acueducto y Alcantarillado ante EAAB | 10d | 2019-07-22 10:00 | 2019-08-05 10:00 | 28SS | 10.12d | 0d | Director de obra [16%]; Gerente de proyectos [15%]; Equipos de cómputo | 24.8h | 856,210 |
| 30 | 1.1.1.4.7 | Trámites y gestiones del servicio de energía ante operadora de red local. (CODENSA S.A. E.S.P) | 10d | 2019-07-22 10:00 | 2019-08-05 10:00 | 29SS | 10.12d | 0d | Proveedor de servicios de consultoria de obra civil, eléctrica o especial [0.1%]; Equipos de cómputo |  | 1,680,210 |
| 31 | 1.1.1.4.8 | Solicitud de canal de comunicaciones ante el operador de red | 10d | 2019-07-22 10:00 | 2019-08-05 10:00 | 30SS | 10.12d | 0d | Director administrativo [12%]; Equipos celulares; Equipos de cómputo | 9.6h | 240,348 |
| 32 | 1.1.1.4.9 | Evaluación de disposición final de residuos | 10d | 2019-07-22 10:00 | 2019-08-05 10:00 | 31SS | 10.12d |  | Director administrativo [10%]; Equipos celulares; Equipos de cómputo | 8h | 200,348 |

| ID | WBS | Task | Duration | Start | Finish | Predecessors | Total slack | Free slack | Resources | Work | Cost |
| --- | --- | --- | --- | --- | --- | --- | --- | --- | --- | --- | --- |
| 33 | 1.1.1.5 | **Definición Criterios de Calidad** | 1d | 2019-08-19 10:00 | 2019-08-20 10:00 | 23 | 0.12d |  |  | 4.8h | 150,270 |
| 34 | 1.1.1.5.1 | Definir políticas de calidad | 4h | 2019-08-19 10:00 | 2019-08-19 16:00 | 23 | 0.12d | 0d | Director administrativo [10%]; Dotación oficina administrativa [0.1%]; Equipos de cómputo; Jefe de calidad; Software [0.1%]; Equipos celulares | 2.4h | 39,994 |
| 35 | 1.1.1.5.2 | Definir parámetros de medición de desempeño | 8h | 2019-08-19 10:00 | 2019-08-20 10:00 | 34SS | 0.12d |  | Gerente de proyectos [25%]; Equipos celulares | 2h | 100,138 |
| 36 | 1.1.1.5.3 | Apropiar las plantillas del sistema de gestión de calidad de CJM Inversiones S.A.S. | 4h | 2019-08-19 10:00 | 2019-08-19 16:00 | 34SS | 0.62d |  | Director administrativo [10%]; Equipos celulares | 0.4h | 10,138 |
| 37 | 1.1.2 | **Factibilidad** | 29.25d | 2019-08-20 10:00 | 2019-09-30 12:00 | 3 | 0.12d |  |  | 43.14h | 4,452,892.52 |
| 38 | 1.1.2.1 | **Obra civil** | 5.75d | 2019-08-20 10:00 | 2019-08-27 18:00 | 3 | 0.12d |  |  | 14.54h | 636,214 |
| 39 | 1.1.2.1.1 | Realizar cuadro de áreas a construir según requerimientos | 8h | 2019-08-20 10:00 | 2019-08-21 10:00 | 3 | 0.12d | 0d | Gerente de proyectos [25%]; Equipos celulares | 2h | 100,138 |
| 40 | 1.1.2.1.2 | Definir especificación y procedencia de materiales a utilizar | 6h | 2019-08-21 10:00 | 2019-08-21 18:00 | 39 | 0.12d | 0d | Director de obra [8%]; Gerente de proyectos [25%]; Equipos celulares | 1.98h | 84,738 |
| 41 | 1.1.2.1.3 | Evaluar sistemas constructivos a implementar | 32h | 2019-08-21 18:00 | 2019-08-27 18:00 | 40 | 0.12d | 0d | Director de obra [8%]; Gerente de proyectos [25%]; Equipos celulares | 10.56h | 451,338 |
| 42 | 1.1.2.2 | **Sistema eléctrico y puesta a tierra** | 15d | 2019-08-27 18:00 | 2019-09-17 18:00 | 41 | 0.12d |  |  | 5.16h | 2,799,214.28 |
| 43 | 1.1.2.2.1 | Viabilidad eléctrica | 8h | 2019-08-27 18:00 | 2019-08-28 18:00 | 41 | 0.12d | 0d | Jefe de ingenieria [12%]; Proveedor de servicios de consultoria de obra civil, eléctrica o especial [0.1%]; Equipos celulares | 0.96h | 70,137.68 |
| 44 | 1.1.2.2.2 | Recopilar documentos requeridos para trámites | 4h | 2019-08-28 18:00 | 2019-08-29 12:00 | 43 | 0.12d | 0d | Jefe de ingenieria [24%]; Equipos celulares | 0.96h | 14,137.68 |
| 45 | 1.1.2.2.3 | Predimencionamiento de cargas requerido para el proyecto | 16h | 2019-08-29 12:00 | 2019-09-02 12:00 | 44 | 0.12d | 0d | Proveedor de servicios de consultoria de obra civil, eléctrica o especial [0.1%]; Equipos celulares |  | 112,138 |
| 46 | 1.1.2.2.4 | Tramitar aumento de carga ante proveedor de energía | 15d | 2019-08-27 18:00 | 2019-09-17 18:00 | 41 | 8.62d |  | Proveedor de servicios de consultoria de obra civil, eléctrica o especial [0.1%]; Equipos celulares |  | 2,520,138 |
| 47 | 1.1.2.2.5 | Panorama de riesgos eléctricos | 4h | 2019-09-02 12:00 | 2019-09-02 18:00 | 45 | 0.12d | 0d | Jefe de ingenieria [36%]; Equipos celulares | 1.44h | 21,137.52 |
| 48 | 1.1.2.2.6 | Análisis de sistemas de puesta a tierra | 3h | 2019-09-02 18:00 | 2019-09-03 11:00 | 47 | 0.12d | 0d | Jefe de ingenieria [36%]; Proveedor de servicios de consultoria de obra civil, eléctrica o especial [0.1%]; Equipos celulares | 1.08h | 36,887.64 |
| 49 | 1.1.2.2.7 | Plano conceptual sistema puesta a tierra | 2h | 2019-09-03 11:00 | 2019-09-03 13:00 | 48 | 0.12d | 0d | Jefe de ingenieria [36%]; Proveedor de servicios de consultoria de obra civil, eléctrica o especial [0.1%]; Equipos celulares | 0.72h | 24,637.76 |
| 50 | 1.1.2.3 | **Carrusel** | 7.5d | 2019-09-03 15:00 | 2019-09-12 19:00 | 49 | 0.12d | 0d |  | 23.44h | 378,946.24 |
| 51 | 1.1.2.3.1 | Definir características del carrusel requerido | 8h | 2019-09-03 15:00 | 2019-09-04 13:00 | 49 | 4.12d | 0d | Director administrativo [4%]; Director de obra [24%]; Equipos celulares | 2.24h | 46,538 |
| 52 | 1.1.2.3.2 | Revisión de las especificaciones técnicas generales | 8h | 2019-09-04 15:00 | 2019-09-05 13:00 | 51 | 4.12d | 4d | Director administrativo [4%]; Director de obra [24%]; Equipos celulares | 2.24h | 46,538 |
| 53 | 1.1.2.3.3 | Estudio de diagramas y manuales de instalación | 48h | 2019-09-03 15:00 | 2019-09-11 13:00 | 49 | 0.12d | 0d | Jefe de ingenieria [36%]; Equipos celulares | 17.28h | 252,132.24 |
| 54 | 1.1.2.3.4 | Generar estrategia de montaje | 12h | 2019-09-11 15:00 | 2019-09-12 19:00 | 52, 53 | 0.12d |  | Director de obra [14%]; Equipos celulares | 1.68h | 33,738 |
| 55 | 1.1.2.4 | **Automatización y control** | 2.25d | 2019-09-13 09:00 | 2019-09-17 11:00 | 50 | 0.12d | 0d |  |  | 126,414 |
| 56 | 1.1.2.4.1 | Análisis de sistemas de automatización para el proyecto | 2h | 2019-09-13 09:00 | 2019-09-13 11:00 | 50 | 0.12d | 0d | Proveedor de servicios de consultoria de obra civil, eléctrica o especial [0.1%]; Equipos celulares |  | 14,138 |
| 57 | 1.1.2.4.2 | Análisis de sistemas de control de acceso para el proyecto | 4h | 2019-09-13 11:00 | 2019-09-13 17:00 | 56 | 0.12d | 0d | Proveedor de servicios de consultoria de obra civil, eléctrica o especial [0.1%]; Equipos celulares |  | 28,138 |
| 58 | 1.1.2.4.3 | Análisis de software para facturación del proyecto | 12h | 2019-09-13 17:00 | 2019-09-17 11:00 | 57 | 0.12d |  | Proveedor de servicios de consultoria de obra civil, eléctrica o especial [0.1%]; Equipos celulares |  | 84,138 |

| ID | WBS | Task | Duration | Start | Finish | Predecessors | Total slack | Free slack | Resources | Work | Cost |
| --- | --- | --- | --- | --- | --- | --- | --- | --- | --- | --- | --- |
| 59 | 1.1.2.5 | **Sistemas de apoyo** | 9.12d | 2019-09-17 11:00 | 2019-09-30 12:00 | 55 | 0.12d | 0d |  |  | 512,104 |
| 60 | 1.1.2.5.1 | Análisis del sistema de UPS | 5h | 2019-09-17 11:00 | 2019-09-17 18:00 | 55 | 0.12d | 0d | Proveedor de servicios de consultoria de obra civil, eléctrica o especial [0.1%]; Equipos celulares |  | 35,138 |
| 61 | 1.1.2.5.2 | Análisis del sistema de Aire acondicionado | 12h | 2019-09-17 18:00 | 2019-09-19 12:00 | 60 | 0.12d | 0d | Proveedor de servicios de consultoria de obra civil, eléctrica o especial [0.1%]; Equipos celulares |  | 84,138 |
| 62 | 1.1.2.5.3 | Análisis del sistema de cableado estructurado | 12h | 2019-09-19 12:00 | 2019-09-20 18:00 | 61 | 0.12d | 0d | Proveedor de servicios de consultoria de obra civil, eléctrica o especial [0.1%]; Equipos celulares |  | 84,138 |
| 63 | 1.1.2.5.4 | Análisis del sistema hidráulico | 12h | 2019-09-20 18:00 | 2019-09-24 12:00 | 62 | 0.12d | 0d | Proveedor de servicios de consultoria de obra civil, eléctrica o especial [0.1%]; Equipos celulares |  | 84,138 |
| 64 | 1.1.2.5.5 | Análisis del sistema contra incendios | 12h | 2019-09-24 12:00 | 2019-09-25 18:00 | 63 | 0.12d | 0d | Proveedor de servicios de consultoria de obra civil, eléctrica o especial [0.1%]; Equipos celulares |  | 84,138 |
| 65 | 1.1.2.5.6 | Análisis del sistema de circuito cerrado de TV | 4h | 2019-09-25 18:00 | 2019-09-26 12:00 | 64 | 0.12d | 0d | Proveedor de servicios de consultoria de obra civil, eléctrica o especial [0.1%]; Equipos celulares |  | 28,138 |
| 66 | 1.1.2.5.7 | Análisis del sistema de Iluminación | 8h | 2019-09-26 12:00 | 2019-09-27 12:00 | 65 | 0.12d | 0d | Proveedor de servicios de consultoria de obra civil, eléctrica o especial [0.1%]; Equipos celulares |  | 56,138 |
| 67 | 1.1.2.5.8 | Análisis del sistema de telecomunicaciones | 8h | 2019-09-27 12:00 | 2019-09-30 12:00 | 66 | 0.12d | 0d | Proveedor de servicios de consultoria de obra civil, eléctrica o especial [0.1%]; Equipos celulares |  | 56,138 |
| 68 | 1.2 | **DISEÑO** | 30.5d | 2019-09-30 12:00 | 2019-11-11 18:00 | 2 | 0.12d | 0d |  | 92.49h | 11,152,970 |
| 69 | 1.2.1 | **Obra civil** | 11.12d | 2019-09-30 12:00 | 2019-10-15 13:00 | 38 | 19.5d | 19.38d |  | 4.15h | 2,245,785 |
| 70 | 1.2.1.1 | **Geotecnia** | 3d | 2019-09-30 12:00 | 2019-10-03 12:00 | 15, 19 | 19.5d | 0d |  | 0.8h | 1,184,552 |
| 71 | 1.2.1.1.1 | Estudios de suelos | 12h | 2019-09-30 12:00 | 2019-10-01 18:00 | 15, 19 | 19.5d | 0d | Estudios técnicos de materiales [0.1%]; Equipos celulares |  | 1,000,138 |
| 72 | 1.2.1.1.2 | Plan para el descapote a máquina | 2h | 2019-10-01 18:00 | 2019-10-02 10:00 | 71 | 20.75d |  | Director de obra [40%]; Equipos celulares | 0.8h | 16,138 |
| 73 | 1.2.1.1.3 | Diseños para cimentación de suelo | 12h | 2019-10-01 18:00 | 2019-10-03 12:00 | 71 | 19.5d | 0d | Proveedor de servicios de consultoria de obra civil, eléctrica o especial [0.1%]; Equipos celulares |  | 84,138 |
| 74 | 1.2.1.1.4 | Diseños para compactación y nivelación de suelos | 12h | 2019-10-01 18:00 | 2019-10-03 12:00 | 73SS | 19.5d |  | Proveedor de servicios de consultoria de obra civil, eléctrica o especial [0.1%]; Equipos celulares |  | 84,138 |
| 75 | 1.2.1.2 | **Diseño arquitectónico** | 8.5d | 2019-09-30 12:00 | 2019-10-10 18:00 | 15, 19 | 22.12d |  |  |  | 554,380 |
| 76 | 1.2.1.2.1 | Plano de Localización general | 4h | 2019-09-30 12:00 | 2019-09-30 18:00 | 15, 19 | 22.12d | 0d | Proveedor de servicios de consultoria de obra civil, eléctrica o especial [0.1%]; Equipos celulares |  | 28,138 |
| 77 | 1.2.1.2.2 | Plano arquitectónico | 6h | 2019-09-30 18:00 | 2019-10-01 16:00 | 76 | 22.12d | 0d | Proveedor de servicios de consultoria de obra civil, eléctrica o especial [0.1%]; Equipos celulares |  | 42,138 |
| 78 | 1.2.1.2.3 | Plano de cubierta | 6h | 2019-10-01 16:00 | 2019-10-02 12:00 | 77 | 22.12d | 0d | Proveedor de servicios de consultoria de obra civil, eléctrica o especial [0.1%]; Equipos celulares |  | 42,138 |
| 79 | 1.2.1.2.4 | Planos de acabados | 12h | 2019-10-02 12:00 | 2019-10-03 18:00 | 78 | 22.12d | 0d | Proveedor de servicios de consultoria de obra civil, eléctrica o especial [0.1%]; Equipos celulares |  | 84,138 |
| 80 | 1.2.1.2.5 | Detalles constructivos | 12h | 2019-10-03 18:00 | 2019-10-07 12:00 | 79 | 22.12d | 0d | Proveedor de servicios de consultoria de obra civil, eléctrica o especial [0.1%]; Equipos celulares |  | 84,138 |
| 81 | 1.2.1.2.6 | Cortes y fachadas | 6h | 2019-10-07 12:00 | 2019-10-08 10:00 | 80 | 22.12d | 0d | Proveedor de servicios de consultoria de obra civil, eléctrica o especial [0.1%]; Equipos celulares |  | 42,138 |
| 82 | 1.2.1.2.7 | Diseño de mobiliario | 16h | 2019-10-08 10:00 | 2019-10-10 10:00 | 81 | 22.12d | 0d | Proveedor de servicios de consultoria de obra civil, eléctrica o especial [0.1%]; Equipos celulares |  | 112,138 |
| 83 | 1.2.1.2.8 | Diseño de señalización | 5h | 2019-10-02 12:00 | 2019-10-02 19:00 | 79SS | 28d |  | Proveedor de servicios de consultoria de obra civil, eléctrica o especial [0.1%]; Equipos celulares |  | 35,138 |
| 84 | 1.2.1.2.9 | Especificaciones técnicas de acabados | 6h | 2019-10-03 18:00 | 2019-10-04 16:00 | 79 | 26.38d |  | Proveedor de servicios de consultoria de obra civil, eléctrica o especial [0.1%]; Equipos celulares |  | 42,138 |
| 85 | 1.2.1.2.10 | Especificaciones técnicas mobiliario | 6h | 2019-10-10 10:00 | 2019-10-10 18:00 | 82 | 22.12d |  | Proveedor de servicios de consultoria de obra civil, eléctrica o especial [0.1%]; Equipos celulares |  | 42,138 |

| ID | WBS | Task | Duration | Start | Finish | Predecessors | Total slack | Free slack | Resources | Work | Cost |
| --- | --- | --- | --- | --- | --- | --- | --- | --- | --- | --- | --- |
| 86 | 1.2.1.3 | **Diseño Estructural** | 8.12d | 2019-10-03 12:00 | 2019-10-15 13:00 | 70 | 19.5d |  |  |  | 455,414 |
| 87 | 1.2.1.3.1 | Memorias de cálculo estructural | 12h | 2019-10-03 12:00 | 2019-10-04 18:00 | 70 | 19.5d | 0d | Proveedor de servicios de consultoria de obra civil, eléctrica o especial [0.1%]; Equipos celulares |  | 84,138 |
| 88 | 1.2.1.3.2 | Planos Estructurales | 48h | 2019-10-04 18:00 | 2019-10-14 18:00 | 87 | 19.5d | 0d | Proveedor de servicios de consultoria de obra civil, eléctrica o especial [0.1%]; Equipos celulares |  | 336,138 |
| 89 | 1.2.1.3.3 | Especificaciones técnicas | 5h | 2019-10-14 18:00 | 2019-10-15 13:00 | 88 | 19.5d |  | Proveedor de servicios de consultoria de obra civil, eléctrica o especial [0.1%]; Equipos celulares |  | 35,138 |
| 90 | 1.2.1.4 | **Facilidades temporales** | 0.25d | 2019-09-30 12:00 | 2019-09-30 16:00 | 15, 19 | 30.38d |  |  | 3.35h | 51,439 |
| 91 | 1.2.1.4.1 | Definición del tipo de cerramiento | 1h | 2019-09-30 12:00 | 2019-09-30 13:00 | 15, 19 | 30.38d | 0d | Residente de obra; Equipos celulares | 1h | 14,721 |
| 92 | 1.2.1.4.2 | Definición de punto de agua potable provisional | 1h | 2019-09-30 12:00 | 2019-09-30 13:00 | 91SS | 30.5d |  | Residente de obra; Equipos celulares | 1h | 14,721 |
| 93 | 1.2.1.4.3 | Plan de la red eléctrica provisional | 1h | 2019-09-30 12:00 | 2019-09-30 13:00 | 91SS | 30.5d |  | Jefe de ingenieria; Equipos celulares | 1h | 14,721 |
| 94 | 1.2.1.4.4 | Dimensionamiento de almacén de obra | 30min | 2019-09-30 12:00 | 2019-09-30 12:30 | 91SS | 30.56d |  | Director de obra [14%]; Equipos celulares | 0.07h | 1,538 |
| 95 | 1.2.1.4.5 | Plan estratégico de vigilancia | 2h | 2019-09-30 12:00 | 2019-09-30 16:00 | 91SS | 30.38d |  | Director de obra [14%]; Equipos celulares | 0.28h | 5,738 |
| 96 | 1.2.2 | **Sistema eléctrico y de puesta a tierra** | 12d | 2019-09-30 12:00 | 2019-10-16 12:00 | 42 | 18.62d |  |  | 7h | 775,323 |
| 97 | 1.2.2.1 | **Disposición de normas para instalaciones externas** | 0.88d | 2019-09-30 12:00 | 2019-10-01 11:00 | 42 | 29.75d |  |  | 7h | 102,495 |
| 98 | 1.2.2.1.1 | Definir las normas RETIE que aplican al proyecto | 2h | 2019-09-30 12:00 | 2019-09-30 16:00 | 42 | 29.75d | 0d | Jefe de ingenieria; Equipos celulares | 2h | 29,304 |
| 99 | 1.2.2.1.2 | Definir las normas RETILAP que aplican al proyecto | 3h | 2019-09-30 16:00 | 2019-09-30 19:00 | 98 | 29.75d | 0d | Jefe de ingenieria; Equipos celulares | 3h | 43,887 |
| 100 | 1.2.2.1.3 | Definir las normas NTC 4552 para Riesgo eléctrico que apliquen | 2h | 2019-10-01 09:00 | 2019-10-01 11:00 | 99 | 29.75d |  | Jefe de ingenieria; Equipos celulares | 2h | 29,304 |
| 101 | 1.2.2.2 | **Estudios y diseños** | 12d | 2019-09-30 12:00 | 2019-10-16 12:00 | 42 | 18.62d |  |  |  | 672,828 |
| 102 | 1.2.2.2.1 | Estudio de cargas eléctricas | 24h | 2019-09-30 12:00 | 2019-10-03 12:00 | 42 | 18.62d | 0d | Proveedor de servicios de consultoria de obra civil, eléctrica o especial [0.1%]; Equipos celulares |  | 168,138 |
| 103 | 1.2.2.2.2 | Diagrama Unifilar | 12h | 2019-10-03 12:00 | 2019-10-04 18:00 | 102 | 18.62d | 0d | Proveedor de servicios de consultoria de obra civil, eléctrica o especial [0.1%]; Equipos celulares |  | 84,138 |
| 104 | 1.2.2.2.3 | Planos eléctricos | 48h | 2019-10-04 18:00 | 2019-10-14 18:00 | 103 | 18.62d | 0d | Proveedor de servicios de consultoria de obra civil, eléctrica o especial [0.1%]; Equipos celulares |  | 336,138 |
| 105 | 1.2.2.2.4 | Especificaciones técnicas | 5h | 2019-10-14 18:00 | 2019-10-15 13:00 | 104 | 18.62d | 0d | Proveedor de servicios de consultoria de obra civil, eléctrica o especial [0.1%]; Equipos celulares |  | 35,138 |
| 106 | 1.2.2.2.5 | Evaluación de riesgo eléctrico | 5h | 2019-10-15 15:00 | 2019-10-16 10:00 | 105 | 18.62d | 0d | Proveedor de servicios de consultoria de obra civil, eléctrica o especial [0.1%]; Equipos celulares |  | 35,138 |
| 107 | 1.2.2.2.6 | Diseño del sistema de puesta a tierra | 2h | 2019-10-16 10:00 | 2019-10-16 12:00 | 106 | 18.62d |  | Proveedor de servicios de consultoria de obra civil, eléctrica o especial [0.1%]; Equipos celulares |  | 14,138 |
| 108 | 1.2.3 | **Sistema de carrusel** | 30.5d | 2019-09-30 12:00 | 2019-11-11 18:00 | 50 | 0.12d |  |  | 78h | 3,347,242 |
| 109 | 1.2.3.1 | **Plataformas** | 3.25d | 2019-09-30 12:00 | 2019-10-03 16:00 | 50 | 0.12d | 0d |  |  | 266,414 |
| 110 | 1.2.3.1.1 | Definición de variables (largo ancho alto de vehículos) | 2h | 2019-09-30 12:00 | 2019-09-30 16:00 | 50 | 0.12d | 0d | Proveedor de sistema de carrusel [0.1%]; Equipos celulares |  | 14,138 |
| 111 | 1.2.3.1.2 | Diseño de fuerzas de la plataforma | 12h | 2019-09-30 16:00 | 2019-10-02 10:00 | 110 | 0.12d | 0d | Proveedor de servicios de consultoria de obra civil, eléctrica o especial [0.1%]; Proveedor de sistema de carrusel [0.1%]; Equipos celulares |  | 168,138 |
| 112 | 1.2.3.1.3 | Especificación de la capacidad de las plataformas | 12h | 2019-10-02 10:00 | 2019-10-03 16:00 | 111 | 0.12d |  | Proveedor de sistema de carrusel [0.1%]; Equipos celulares |  | 84,138 |

| ID | WBS | Task | Duration | Start | Finish | Predecessors | Total slack | Free slack | Resources | Work | Cost |
| --- | --- | --- | --- | --- | --- | --- | --- | --- | --- | --- | --- |
| 113 | 1.2.3.2 | **Motores y transmisión de movimiento** | 13.5d | 2019-10-03 16:00 | 2019-10-23 10:00 | 50, 109 | 0.12d | 0d |  | 72h | 2,244,414 |
| 114 | 1.2.3.2.1 | Diseño del torque, velocidad, consumo de energía eléctrica y otra variables | 12h | 2019-10-03 16:00 | 2019-10-07 10:00 | 50, 109 | 0.12d | 0d | Proveedor de sistema de carrusel [0.1%]; Equipos celulares |  | 84,138 |
| 115 | 1.2.3.2.2 | Verificar requerimientos del producto | 48h | 2019-10-07 10:00 | 2019-10-15 10:00 | 114 | 0.12d | 0d | Gerente de proyectos [50%]; Equipos celulares | 24h | 1,200,138 |
| 116 | 1.2.3.2.3 | Programación de montaje e instalación | 48h | 2019-10-15 10:00 | 2019-10-23 10:00 | 115 | 0.12d |  | Director de obra; Equipos celulares | 48h | 960,138 |
| 117 | 1.2.3.3 | **Sistema de control de acceso** | 13.75d | 2019-10-23 10:00 | 2019-11-11 18:00 | 113 | 0.12d |  |  | 6h | 836,414 |
| 118 | 1.2.3.3.1 | Diseño del sistema de control de acceso | 2h | 2019-10-23 10:00 | 2019-10-23 12:00 | 113 | 0.12d | 0d | Proveedor de servicios de consultoria de obra civil, eléctrica o especial [0.1%]; Equipos celulares |  | 14,138 |
| 119 | 1.2.3.3.2 | Definir la estrategia de operación | 12h | 2019-10-23 12:00 | 2019-10-24 18:00 | 118 | 0.12d | 0d | Director administrativo [50%]; Equipos celulares | 6h | 150,138 |
| 120 | 1.2.3.3.3 | Diseño del sistema de control y automatización | 96h | 2019-10-24 18:00 | 2019-11-11 18:00 | 119 | 0.12d |  | Proveedor de servicios de consultoria de obra civil, eléctrica o especial [0.1%]; Equipos celulares |  | 672,138 |
| 121 | 1.2.4 | **Automatización y control** | 18.88d | 2019-09-30 12:00 | 2019-10-25 11:00 | 55 | 11.75d |  |  | 3.06h | 3,277,432 |
| 122 | 1.2.4.1 | **Sistema digital de facturación** | 18.88d | 2019-09-30 12:00 | 2019-10-25 11:00 | 55 | 11.75d |  |  | 2.5h | 2,765,190 |
| 123 | 1.2.4.1.1 | Definición de la arquitectura, componentes e interfaces (software) | 5h | 2019-09-30 12:00 | 2019-09-30 19:00 | 55 | 11.75d | 0d | Proveedor de servicios de consultoria de obra civil, eléctrica o especial [0.1%]; Equipos celulares |  | 35,138 |
| 124 | 1.2.4.1.2 | Establecer ingeniería de requerimientos | 16h | 2019-10-01 09:00 | 2019-10-02 19:00 | 123 | 11.75d | 0d | Proveedor de servicios de consultoria de obra civil, eléctrica o especial [0.1%]; Equipos celulares |  | 112,138 |
| 125 | 1.2.4.1.3 | Diseño del diagrama de flujo | 5h | 2019-10-03 09:00 | 2019-10-03 16:00 | 124 | 11.75d | 0d | Proveedor de servicios de consultoria de obra civil, eléctrica o especial [0.1%]; Equipos celulares |  | 35,138 |
| 126 | 1.2.4.1.4 | Diseño de las bases de datos | 15d | 2019-10-03 16:00 | 2019-10-24 16:00 | 125 | 11.75d | 0d | Proveedor de servicios de consultoria de obra civil, eléctrica o especial [0.1%]; Equipos celulares |  | 2,520,138 |
| 127 | 1.2.4.1.5 | Selección de equipos de computo y servidores | 5h | 2019-10-24 16:00 | 2019-10-25 11:00 | 126 | 11.75d |  | Director administrativo [50%]; Equipos celulares | 2.5h | 62,638 |
| 128 | 1.2.4.2 | **Sistema automatizado de parqueo** | 6.5d | 2019-09-30 12:00 | 2019-10-08 18:00 | 55 | 24.12d |  |  | 0.28h | 357,690 |
| 129 | 1.2.4.2.1 | Definir el sistema de control | 2h | 2019-09-30 12:00 | 2019-09-30 16:00 | 55 | 24.12d | 0d | Director administrativo [14%]; Equipos celulares | 0.28h | 7,138 |
| 130 | 1.2.4.2.2 | Clasificación de sensores y actuadores | 2h | 2019-09-30 16:00 | 2019-09-30 18:00 | 129 | 24.12d | 0d | Proveedor de servicios de consultoria de obra civil, eléctrica o especial [0.1%]; Equipos celulares |  | 14,138 |
| 131 | 1.2.4.2.3 | Diseño de planos y simbología | 24h | 2019-09-30 18:00 | 2019-10-03 18:00 | 130 | 24.12d | 0d | Proveedor de servicios de consultoria de obra civil, eléctrica o especial [0.1%]; Equipos celulares |  | 168,138 |
| 132 | 1.2.4.2.4 | Diseño del cableado estructurado | 12h | 2019-10-03 18:00 | 2019-10-07 12:00 | 131 | 24.12d | 0d | Proveedor de servicios de consultoria de obra civil, eléctrica o especial [0.1%]; Equipos celulares |  | 84,138 |
| 133 | 1.2.4.2.5 | Diseño del cableado eléctrico | 12h | 2019-10-07 12:00 | 2019-10-08 18:00 | 132 | 24.12d |  | Proveedor de servicios de consultoria de obra civil, eléctrica o especial [0.1%]; Equipos celulares |  | 84,138 |
| 134 | 1.2.4.3 | **Sistema automático de acceso** | 2.88d | 2019-09-30 12:00 | 2019-10-03 11:00 | 55 | 27.75d |  |  | 0.28h | 154,552 |
| 135 | 1.2.4.3.1 | Definición de la tecnología de adquisición de imágenes | 2h | 2019-09-30 12:00 | 2019-09-30 16:00 | 55 | 27.75d | 0d | Director administrativo [14%]; Equipos celulares | 0.28h | 7,138 |
| 136 | 1.2.4.3.2 | Selección de componentes y equipos para adquisición de imágenes | 4h | 2019-09-30 16:00 | 2019-10-01 10:00 | 135 | 27.75d | 0d | Proveedor de servicios de consultoria de obra civil, eléctrica o especial [0.1%]; Equipos celulares |  | 28,138 |
| 137 | 1.2.4.3.3 | Definir tecnología de reconocimiento óptico | 5h | 2019-10-01 10:00 | 2019-10-01 17:00 | 136 | 27.75d | 0d | Proveedor de servicios de consultoria de obra civil, eléctrica o especial [0.1%]; Equipos celulares |  | 35,138 |
| 138 | 1.2.4.3.4 | Diseño de control de acceso | 12h | 2019-10-01 17:00 | 2019-10-03 11:00 | 137 | 27.75d |  | Proveedor de servicios de consultoria de obra civil, eléctrica o especial [0.1%]; Equipos celulares |  | 84,138 |

| ID | WBS | Task | Duration | Start | Finish | Predecessors | Total slack | Free slack | Resources | Work | Cost |
| --- | --- | --- | --- | --- | --- | --- | --- | --- | --- | --- | --- |
| 139 | 1.2.5 | **Sistemas de apoyo** | 7.88d | 2019-09-30 12:00 | 2019-10-10 11:00 | 59 | 22.75d | 22.62d |  | 0.28h | 1,507,188 |
| 140 | 1.2.5.1 | **UPS** | 1.75d | 2019-09-30 12:00 | 2019-10-02 10:00 | 60 | 28.88d |  |  | 0.28h | 89,876 |
| 141 | 1.2.5.1.1 | Ubicación y dimensionamiento del cuarto de UPS | 2h | 2019-09-30 12:00 | 2019-09-30 16:00 | 60 | 28.88d | 0d | Director de obra [14%]; Equipos celulares | 0.28h | 5,738 |
| 142 | 1.2.5.1.2 | Estudios de carga y diseños detallados | 12h | 2019-09-30 16:00 | 2019-10-02 10:00 | 141 | 28.88d |  | Proveedor de servicios de consultoria de obra civil, eléctrica o especial [0.1%]; Equipos celulares |  | 84,138 |
| 143 | 1.2.5.2 | **Aire acondicionado** | 3.62d | 2019-09-30 12:00 | 2019-10-03 19:00 | 61 | 27d | 26.88d |  |  | 203,414 |
| 144 | 1.2.5.2.1 | Cálculo de BTU requeridos por espacio para dimensionar el sistema | 12h | 2019-09-30 12:00 | 2019-10-01 18:00 | 61 | 27d | 0d | Proveedor de servicios de consultoria de obra civil, eléctrica o especial [0.1%]; Equipos celulares |  | 84,138 |
| 145 | 1.2.5.2.2 | Plano de ubicación de equipos de aire acondicionado | 12h | 2019-10-01 18:00 | 2019-10-03 12:00 | 144 | 27d | 0d | Proveedor de servicios de consultoria de obra civil, eléctrica o especial [0.1%]; Equipos celulares |  | 84,138 |
| 146 | 1.2.5.2.3 | Especificaciones técnicas y manuales de equipos a utilizar. | 5h | 2019-10-03 12:00 | 2019-10-03 19:00 | 145 | 27d |  | Proveedor de servicios de consultoria de obra civil, eléctrica o especial [0.1%]; Equipos celulares |  | 35,138 |
| 147 | 1.2.5.3 | **Cableado estructurado** | 2d | 2019-09-30 12:00 | 2019-10-02 12:00 | 62 | 28.62d | 28.5d |  |  | 112,276 |
| 148 | 1.2.5.3.1 | Especificaciones técnicas de los puntos y cableado | 4h | 2019-09-30 12:00 | 2019-09-30 18:00 | 62 | 28.62d | 0d | Proveedor de servicios de consultoria de obra civil, eléctrica o especial [0.1%]; Equipos celulares |  | 28,138 |
| 149 | 1.2.5.3.2 | Planos de cableado estructurado | 12h | 2019-09-30 18:00 | 2019-10-02 12:00 | 148 | 28.62d |  | Proveedor de servicios de consultoria de obra civil, eléctrica o especial [0.1%]; Equipos celulares |  | 84,138 |
| 150 | 1.2.5.4 | **Sistema hidráulico** | 7.88d | 2019-09-30 12:00 | 2019-10-10 11:00 | 63 | 22.75d | 22.62d |  |  | 469,828 |
| 151 | 1.2.5.4.1 | Memorias de cálculo del requerimiento hidráulico | 12h | 2019-09-30 12:00 | 2019-10-01 18:00 | 63 | 22.75d | 0d | Proveedor de servicios de consultoria de obra civil, eléctrica o especial [0.1%]; Equipos celulares |  | 84,138 |
| 152 | 1.2.5.4.2 | Plano hidráulico | 16h | 2019-10-01 18:00 | 2019-10-03 18:00 | 151 | 22.75d | 0d | Proveedor de servicios de consultoria de obra civil, eléctrica o especial [0.1%]; Equipos celulares |  | 112,138 |
| 153 | 1.2.5.4.3 | Plano sanitario | 16h | 2019-10-03 18:00 | 2019-10-07 18:00 | 152 | 22.75d | 0d | Proveedor de servicios de consultoria de obra civil, eléctrica o especial [0.1%]; Equipos celulares |  | 112,138 |
| 154 | 1.2.5.4.4 | Plano detallado de tanque de almacenamiento de agua | 12h | 2019-10-07 18:00 | 2019-10-09 12:00 | 153 | 22.75d | 0d | Proveedor de servicios de consultoria de obra civil, eléctrica o especial [0.1%]; Equipos celulares |  | 112,138 |
| 155 | 1.2.5.4.5 | Memorias de cálculo de bombas requeridas | 5h | 2019-10-09 12:00 | 2019-10-09 19:00 | 154 | 22.75d | 0d | Proveedor de servicios de consultoria de obra civil, eléctrica o especial [0.1%]; Equipos celulares |  | 35,138 |
| 156 | 1.2.5.4.6 | Especificaciones técnicas instalaciones hidrosanitarias | 2h | 2019-10-10 09:00 | 2019-10-10 11:00 | 155 | 22.75d |  | Proveedor de servicios de consultoria de obra civil, eléctrica o especial [0.1%]; Equipos celulares |  | 14,138 |
| 157 | 1.2.5.5 | **Sistema contraincendios** | 5.25d | 2019-09-30 12:00 | 2019-10-07 16:00 | 64 | 25.38d | 25.25d |  |  | 294,552 |
| 158 | 1.2.5.5.1 | Plano de red contraincendios | 12h | 2019-09-30 12:00 | 2019-10-01 18:00 | 64 | 25.38d | 0d | Proveedor de servicios de consultoria de obra civil, eléctrica o especial [0.1%]; Equipos celulares |  | 84,138 |
| 159 | 1.2.5.5.2 | Memorias de cálculo de la red contraincendios | 12h | 2019-10-01 18:00 | 2019-10-03 12:00 | 158 | 25.38d | 0d | Proveedor de servicios de consultoria de obra civil, eléctrica o especial [0.1%]; Equipos celulares |  | 84,138 |
| 160 | 1.2.5.5.3 | Diseño del sistema de detección de incendios | 16h | 2019-10-03 12:00 | 2019-10-07 12:00 | 159 | 25.38d | 0d | Proveedor de servicios de consultoria de obra civil, eléctrica o especial [0.1%]; Equipos celulares |  | 112,138 |
| 161 | 1.2.5.5.4 | Especificaciones técnicas de tubería y accesorios | 2h | 2019-10-07 12:00 | 2019-10-07 16:00 | 160 | 25.38d |  | Proveedor de servicios de consultoria de obra civil, eléctrica o especial [0.1%]; Equipos celulares |  | 14,138 |
| 162 | 1.2.5.6 | **Circuito cerrado de TV** | 3.25d | 2019-09-30 12:00 | 2019-10-03 16:00 | 65 | 27.38d | 27.25d |  |  | 182,414 |
| 163 | 1.2.5.6.1 | Planos de ubicación de cámaras, DVR y pantallas | 12h | 2019-09-30 12:00 | 2019-10-01 18:00 | 65 | 27.38d | 0d | Proveedor de servicios de consultoria de obra civil, eléctrica o especial [0.1%]; Equipos celulares |  | 84,138 |
| 164 | 1.2.5.6.2 | Planos del cableado de red y cableado eléctrico | 12h | 2019-10-01 18:00 | 2019-10-03 12:00 | 163 | 27.38d | 0d | Proveedor de servicios de consultoria de obra civil, eléctrica o especial [0.1%]; Equipos celulares |  | 84,138 |
| 165 | 1.2.5.6.3 | Dimensionamiento de la conexión a internet | 2h | 2019-10-03 12:00 | 2019-10-03 16:00 | 164 | 27.38d |  | Proveedor de servicios de consultoria de obra civil, eléctrica o especial [0.1%]; Equipos celulares |  | 14,138 |

| ID | WBS | Task | Duration | Start | Finish | Predecessors | Total slack | Free slack | Constraint | Resources | Work | Cost |
| --- | --- | --- | --- | --- | --- | --- | --- | --- | --- | --- | --- | --- |
| 166 | 1.2.5.7 | **Iluminación** | 0.88d | 2019-09-30 12:00 | 2019-10-01 11:00 | 66 | 29.75d | 29.62d |  |  |  | 49,276 |
| 167 | 1.2.5.7.1 | Planos de sistema de iluminación | 5h | 2019-09-30 12:00 | 2019-09-30 19:00 | 66 | 29.75d | 0d |  | Proveedor de servicios de consultoria de obra civil, eléctrica o especial [0.1%]; Equipos celulares |  | 35,138 |
| 168 | 1.2.5.7.2 | Fichas técnicas de postes, estructuras y luminarias | 2h | 2019-10-01 09:00 | 2019-10-01 11:00 | 167 | 29.75d |  |  | Proveedor de servicios de consultoria de obra civil, eléctrica o especial [0.1%]; Equipos celulares |  | 14,138 |
| 169 | 1.2.5.8 | **Telecomunicaciones** | 0.75d | 2019-09-30 12:00 | 2019-10-01 10:00 | 67 | 29.88d | 29.75d |  |  |  | 42,276 |
| 170 | 1.2.5.8.1 | Plano red telefónica y fibra óptica | 4h | 2019-09-30 12:00 | 2019-09-30 18:00 | 67 | 29.88d | 0d |  | Proveedor de servicios de consultoria de obra civil, eléctrica o especial [0.1%]; Equipos celulares |  | 28,138 |
| 171 | 1.2.5.8.2 | Plano de proveedor de comunicaciones | 2h | 2019-09-30 18:00 | 2019-10-01 10:00 | 170 | 29.88d |  |  | Proveedor de servicios de consultoria de obra civil, eléctrica o especial [0.1%]; Equipos celulares |  | 14,138 |
| 172 | 1.2.5.9 | **Talanquera de acceso** | 1.12d | 2019-09-30 12:00 | 2019-10-01 13:00 | 50, 55 | 29.5d | 29.38d |  |  |  | 63,276 |
| 173 | 1.2.5.9.1 | Planos eléctricos y de control | 5h | 2019-09-30 12:00 | 2019-09-30 19:00 | 50, 55 | 29.5d | 0d |  | Proveedor de servicios de consultoria de obra civil, eléctrica o especial [0.1%]; Equipos celulares |  | 35,138 |
| 174 | 1.2.5.9.2 | Planos de ubicación de los elementos | 4h | 2019-10-01 09:00 | 2019-10-01 13:00 | 173 | 29.5d |  |  | Proveedor de servicios de consultoria de obra civil, eléctrica o especial [0.1%]; Equipos celulares |  | 28,138 |
| 175 | 1.3 | **ADQUISICIONES** | 122d | 2019-04-24 09:00 | 2019-10-10 19:00 | 516 | 0.12d | 0d |  |  | 1381.12h | 1,232,536,603.04 |
| 176 | 1.3.1 | **Obra Civil** | 12d | 2019-07-24 09:00 | 2019-08-08 19:00 | 246, 247, 237SS+5d | 67d | 2d |  |  | 59.79h | 1,308,372 |
| 177 | 1.3.1.1 | Contratar diseño arquitectónico | 7d | 2019-07-24 09:00 | 2019-08-01 19:00 | 246, 247, 237SS+5d | 67d | 0d | start no earlier than 2019-07-24 09:00 | Director de obra [10%]; Director administrativo [10%]; Equipos celulares | 10.86h | 245,248 |
| 178 | 1.3.1.2 | Contratar diseño estructural | 7d | 2019-07-24 09:00 | 2019-08-01 19:00 | 246, 247, 237SS+5d | 67d | 0d | start no earlier than 2019-07-24 09:00 | Director de obra [10%]; Director administrativo [10%]; Equipos celulares | 10.86h | 245,248 |
| 179 | 1.3.1.3 | Contratar obra civil | 7d | 2019-07-31 09:00 | 2019-08-08 19:00 | 246, 247, 177SS+5d | 67d |  |  | Director de obra [24%]; Director administrativo [10%]; Equipos celulares | 19.04h | 408,938 |
| 180 | 1.3.1.4 | Contratar estructura | 7d | 2019-07-31 09:00 | 2019-08-08 19:00 | 246, 247, 178SS+5d | 67d |  |  | Director de obra [24%]; Director administrativo [10%]; Equipos celulares | 19.04h | 408,938 |
| 181 | 1.3.2 | **Sistema eléctrico y puesta a tierra** | 7d | 2019-08-02 09:00 | 2019-08-12 19:00 | 246, 249, 177, 178 | 76.12d | 0d |  |  | 24.64h | 476,271.52 |
| 182 | 1.3.2.1 | Contratar diseño eléctrico | 7d | 2019-08-02 09:00 | 2019-08-12 19:00 | 246, 249, 177, 178 | 76.12d |  |  | Director administrativo [10%]; Jefe de ingenieria [12%]; Equipos celulares | 12.32h | 238,135.76 |
| 183 | 1.3.2.2 | Contratar instalación eléctrica | 7d | 2019-08-02 09:00 | 2019-08-12 19:00 | 246, 249, 177, 178 | 76.12d |  |  | Director administrativo [10%]; Jefe de ingenieria [12%]; Equipos celulares | 12.32h | 238,135.76 |
| 184 | 1.3.3 | **Sistema de carrusel** | 45d | 2019-07-17 09:00 | 2019-09-17 19:00 | 246, 249 | 339.88d |  |  |  | 208.08h | 1,203,755,143.68 |
| 185 | 1.3.3.1 | Adquisición del sistema de carrusel | 45d | 2019-07-17 09:00 | 2019-09-17 19:00 | 246, 249 | 339.88d | 0d |  | Director administrativo [9%]; Modulo de carrusel 16 plazas [400%]; Jefe de ingenieria [25%]; Equipos celulares | 122.4h | 1,202,122,608 |
| 186 | 1.3.3.2 | Contrato de logística y transporte | 15d | 2019-07-26 09:00 | 2019-08-15 19:00 | 246, 249, 185SS+7d | 362.88d |  |  | Director administrativo [9%]; Jefe de ingenieria [12%]; Equipos celulares | 25.2h | 480,133.2 |
| 187 | 1.3.3.3 | Contrato de montaje e instalación | 15d | 2019-08-07 09:00 | 2019-08-27 19:00 | 246, 249, 185SS+15d | 354.88d |  |  | Director administrativo [9%]; Jefe de ingenieria [12%]; Equipos celulares | 25.2h | 480,133.2 |
| 188 | 1.3.3.4 | Contrato de soporte, mantenimiento y garantía | 15d | 2019-08-07 09:00 | 2019-08-27 19:00 | 246, 249, 185SS+15d | 354.88d |  |  | Director administrativo [9%]; Jefe de ingenieria [12%]; Equipos celulares | 25.2h | 480,133.2 |
| 189 | 1.3.3.5 | Contratar sistema de control de acceso | 6d | 2019-08-07 09:00 | 2019-08-14 19:00 | 246, 249, 185SS+15d | 342.88d | 0d |  | Director administrativo [9%]; Jefe de ingenieria [12%]; Equipos celulares | 10.08h | 192,136.08 |

| ID | WBS | Task | Duration | Start | Finish | Predecessors | Total slack | Free slack | Constraint | Resources | Work | Cost |
| --- | --- | --- | --- | --- | --- | --- | --- | --- | --- | --- | --- | --- |
| 190 | 1.3.4 | **Automatización y control** | 37d | 2019-08-13 09:00 | 2019-10-02 19:00 | 246, 249, 176, 181 | 265d |  |  |  | 148.56h | 2,589,372.64 |
| 191 | 1.3.4.1 | **Sistema digital de facturación** | 22d | 2019-08-13 09:00 | 2019-09-11 19:00 | 246, 249, 176, 181 | 265d |  |  |  | 45.12h | 781,736.24 |
| 192 | 1.3.4.1.1 | Contrato para el software | 15d | 2019-08-13 09:00 | 2019-09-02 19:00 | 246, 249, 176, 181 | 350.88d |  |  | Director administrativo [4%]; Jefe de ingenieria [12%]; Equipos celulares | 19.2h | 330,133.2 |
| 193 | 1.3.4.1.2 | Contrato para el hardware | 15d | 2019-08-13 09:00 | 2019-09-02 19:00 | 246, 249, 176, 181 | 265d | 0d |  | Director administrativo [4%]; Jefe de ingenieria [12%]; Equipos celulares | 19.2h | 330,133.2 |
| 194 | 1.3.4.1.3 | Contrato para soporte, mantenimiento y garantía | 7d | 2019-09-03 09:00 | 2019-09-11 19:00 | 193 | 265d | 0d |  | Director administrativo [4%]; Jefe de ingenieria [8%]; Equipos celulares | 6.72h | 121,469.84 |
| 195 | 1.3.4.2 | **Sistema automatizado de parqueo** | 22d | 2019-09-03 09:00 | 2019-10-02 19:00 | 246, 249, 176, 181 | 328.88d |  |  |  | 64.64h | 1,124,731.6 |
| 196 | 1.3.4.2.1 | Contrato para el software | 15d | 2019-09-03 09:00 | 2019-09-23 19:00 | 193 | 335.88d |  |  | Director administrativo [4%]; Jefe de ingenieria [8%]; Equipos celulares | 14.4h | 260,134.8 |
| 197 | 1.3.4.2.2 | Contrato para el hardware | 15d | 2019-09-03 09:00 | 2019-09-23 19:00 | 193 | 328.88d | 0d |  | Director administrativo [4%]; Jefe de ingenieria [8%]; Equipos celulares | 14.4h | 260,134.8 |
| 198 | 1.3.4.2.3 | Contrato para soporte, mantenimiento y garantía | 7d | 2019-09-24 09:00 | 2019-10-02 19:00 | 197 | 328.88d |  |  | Director administrativo [14%]; Jefe de ingenieria; Equipos celulares | 35.84h | 604,462 |
| 199 | 1.3.4.3 | **Sistema automático de acceso** | 21d | 2019-08-15 09:00 | 2019-09-12 19:00 | 246, 249, 176, 181 | 342.88d |  |  |  | 38.8h | 682,904.8 |
| 200 | 1.3.4.3.1 | Contrato para el software | 7d | 2019-08-15 09:00 | 2019-08-23 19:00 | 189 | 342.88d | 0d | start no earlier than 2019-08-13 09:00 | Director administrativo [4%]; Jefe de ingenieria [27%]; Equipos celulares | 13.04h | 213,634.4 |
| 201 | 1.3.4.3.2 | Contrato para el hardware | 7d | 2019-08-26 09:00 | 2019-09-03 19:00 | 200 | 342.88d | 0d |  | Director administrativo [10%]; Jefe de ingenieria [15%]; Equipos celulares | 14h | 262,635.2 |
| 202 | 1.3.4.3.3 | Contrato para soporte, mantenimiento y garantía | 7d | 2019-09-04 09:00 | 2019-09-12 19:00 | 201 | 342.88d |  |  | Director administrativo [6%]; Jefe de ingenieria [15%]; Equipos celulares | 11.76h | 206,635.2 |
| 203 | 1.3.5 | **Sistemas de apoyo** | 43d | 2019-08-13 09:00 | 2019-10-10 19:00 | 246, 247, 176, 181 | 249.88d |  |  |  | 441.76h | 9,816,636 |
| 204 | 1.3.5.1 | **UPS** | 36d | 2019-08-13 09:00 | 2019-10-01 19:00 | 246, 247, 176, 181 | 272.25d | 253.25d |  |  | 71.44h | 1,578,014 |
| 205 | 1.3.5.1.1 | Contrato de adquisición de equipos | 30d | 2019-08-13 09:00 | 2019-09-23 19:00 | 246, 247, 176, 181 | 278.25d |  |  | Director de obra [12%]; Director administrativo [4%]; Equipos celulares | 38.4h | 816,138 |
| 206 | 1.3.5.1.2 | Contrato de instalación de equipos | 7d | 2019-09-12 09:00 | 2019-09-20 19:00 | 194 | 265d | 0d |  | Director de obra [14%]; Director administrativo [14%]; Equipos celulares | 15.68h | 352,938 |
| 207 | 1.3.5.1.3 | Contrato de soporte, mantenimiento y garantía | 7d | 2019-09-23 09:00 | 2019-10-01 19:00 | 206 | 272.25d |  |  | Director de obra [9%]; Director administrativo [22%]; Equipos celulares | 17.36h | 408,938 |
| 208 | 1.3.5.2 | **Aire acondicionado** | 43d | 2019-08-13 09:00 | 2019-10-10 19:00 | 246, 247, 176, 181 | 265d | 21.88d |  |  | 116.8h | 2,647,614 |
| 209 | 1.3.5.2.1 | Contrato de adquisición de equipos y ductos | 30d | 2019-08-13 09:00 | 2019-09-23 19:00 | 246, 247, 176, 181 | 278d |  |  | Director de obra [12%]; Director administrativo [4%]; Equipos celulares | 38.4h | 816,138 |
| 210 | 1.3.5.2.2 | Contrato de instalación de equipos y ductos | 7d | 2019-09-23 09:00 | 2019-10-01 19:00 | 206 | 265d | 0d |  | Director de obra [9%]; Director administrativo [22%]; Equipos celulares | 17.36h | 408,938 |
| 211 | 1.3.5.2.3 | Contrato de soporte, mantenimiento y garantía | 7d | 2019-10-02 09:00 | 2019-10-10 19:00 | 210 | 265d |  |  | Director de obra [37%]; Director administrativo [72%]; Equipos celulares | 61.04h | 1,422,538 |
| 212 | 1.3.5.3 | **Cableado estructurado** | 10d | 2019-09-23 09:00 | 2019-10-04 19:00 | 246, 247, 176, 181 | 266.5d | 25.88d |  |  | 23.6h | 544,276 |
| 213 | 1.3.5.3.1 | Contrato de adquisición de materiales | 5d | 2019-09-23 09:00 | 2019-09-27 19:00 | 206 | 266.5d | 0d |  | Director de obra [9%]; Director administrativo [22%]; Equipos celulares | 12.4h | 292,138 |
| 214 | 1.3.5.3.2 | Contrato de instalación | 5d | 2019-09-30 09:00 | 2019-10-04 19:00 | 213 | 266.5d |  |  | Director de obra [14%]; Director administrativo [14%]; Equipos celulares | 11.2h | 252,138 |

| ID | WBS | Task | Duration | Start | Finish | Predecessors | Total slack | Free slack | Resources | Work | Cost |
| --- | --- | --- | --- | --- | --- | --- | --- | --- | --- | --- | --- |
| 215 | 1.3.5.4 | **Sistema hidráulico** | 30d | 2019-08-13 09:00 | 2019-09-23 19:00 | 246, 247, 176, 181 | 249.88d | 34.88d |  | 47.36h | 1,006,676 |
| 216 | 1.3.5.4.1 | Contrato de adquisición de materiales | 30d | 2019-08-13 09:00 | 2019-09-23 19:00 | 246, 247, 176, 181 | 249.88d |  | Director de obra [12%]; Director administrativo [4%]; Equipos celulares | 38.4h | 816,138 |
| 217 | 1.3.5.4.2 | Contrato de instalación | 7d | 2019-08-13 09:00 | 2019-08-21 19:00 | 246, 247, 176, 181 | 272.88d | 0d | Director de obra [12%]; Director administrativo [4%]; Equipos celulares | 8.96h | 190,538 |
| 218 | 1.3.5.5 | **Sistema contraincendios** | 19d | 2019-08-13 09:00 | 2019-09-06 19:00 | 246, 247, 176, 181 | 289.38d | 45.88d |  | 36.4h | 792,414 |
| 219 | 1.3.5.5.1 | Contrato de adquisición de elementos | 15d | 2019-08-13 09:00 | 2019-09-02 19:00 | 246, 247, 176, 181 | 293.38d |  | Director de obra [12%]; Director administrativo [4%]; Equipos celulares | 19.2h | 408,138 |
| 220 | 1.3.5.5.2 | Contrato de instalación | 7d | 2019-08-22 09:00 | 2019-08-30 19:00 | 217 | 282.38d | 0d | Director de obra [10%]; Director administrativo [10%]; Equipos celulares | 11.2h | 252,138 |
| 221 | 1.3.5.5.3 | Contrato de soporte, mantenimiento y garantía | 5d | 2019-09-02 09:00 | 2019-09-06 19:00 | 220 | 289.38d |  | Director de obra [9%]; Director administrativo [6%]; Equipos celulares | 6h | 132,138 |
| 222 | 1.3.5.6 | **Circuito cerrado de TV** | 26d | 2019-08-13 09:00 | 2019-09-17 19:00 | 246, 247, 176, 181 | 282.38d | 38.88d |  | 38.8h | 845,214 |
| 223 | 1.3.5.6.1 | Contrato de adquisición de equipos | 15d | 2019-08-13 09:00 | 2019-09-02 19:00 | 246, 247, 176, 181 | 293.38d |  | Director de obra [12%]; Director administrativo [4%]; Equipos celulares | 19.2h | 408,138 |
| 224 | 1.3.5.6.2 | Contrato de instalación de equipos | 7d | 2019-09-02 09:00 | 2019-09-10 19:00 | 220 | 282.38d | 0d | Director de obra [9%]; Director administrativo [6%]; Equipos celulares | 8.4h | 184,938 |
| 225 | 1.3.5.6.3 | Contrato de soporte, mantenimiento y garantía | 5d | 2019-09-11 09:00 | 2019-09-17 19:00 | 224 | 282.38d |  | Director de obra [14%]; Director administrativo [14%]; Equipos celulares | 11.2h | 252,138 |
| 226 | 1.3.5.7 | **Iluminación** | 12d | 2019-08-13 09:00 | 2019-08-28 19:00 | 246, 247, 176, 181 | 278.5d | 52.88d |  | 14.72h | 325,876 |
| 227 | 1.3.5.7.1 | Contrato de adquisición de elementos | 7d | 2019-08-13 09:00 | 2019-08-21 19:00 | 246, 247, 176, 181 | 278.5d | 0d | Director de obra [8%]; Director administrativo [4%]; Equipos celulares | 6.72h | 145,738 |
| 228 | 1.3.5.7.2 | Contrato de instalación | 5d | 2019-08-22 09:00 | 2019-08-28 19:00 | 227 | 278.5d | 0d | Director de obra [10%]; Director administrativo [10%]; Equipos celulares | 8h | 180,138 |
| 229 | 1.3.5.8 | **Telecomunicaciones** | 5d | 2019-08-29 09:00 | 2019-09-04 19:00 | 246, 247, 176, 181 | 278.5d | 47.88d |  | 13.6h | 320,138 |
| 230 | 1.3.5.8.1 | Contratos de proveedores de comunicaciones | 5d | 2019-08-29 09:00 | 2019-09-04 19:00 | 228 | 278.5d | 0d | Director de obra [10%]; Director administrativo [24%]; Equipos celulares | 13.6h | 320,138 |
| 231 | 1.3.5.9 | **Talanquera de acceso** | 30d | 2019-08-13 09:00 | 2019-09-23 19:00 | 246, 247, 176, 181 | 277.5d | 34.88d |  | 79.04h | 1,756,414 |
| 232 | 1.3.5.9.1 | Contrato de adquisición de equipos | 30d | 2019-08-13 09:00 | 2019-09-23 19:00 | 246, 247, 176, 181 | 277.5d |  | Director de obra [12%]; Director administrativo [4%]; Equipos celulares | 38.4h | 816,138 |
| 233 | 1.3.5.9.2 | Contrato de instalación de equipos | 7d | 2019-09-05 09:00 | 2019-09-13 19:00 | 230 | 278.5d | 0d | Director de obra [10%]; Director administrativo [24%]; Equipos celulares | 19.04h | 448,138 |
| 234 | 1.3.5.9.3 | Contrato de soporte, mantenimiento y garantía | 5d | 2019-09-16 09:00 | 2019-09-20 19:00 | 233 | 278.5d |  | Director de obra [24%]; Director administrativo [30%]; Equipos celulares | 21.6h | 492,138 |
| 235 | 1.3.6 | **Contratos documentos y estudios** | 15d | 2019-07-17 09:00 | 2019-08-06 19:00 | 242 | 6.5d | 3.75d |  | 75.89h | 1,629,228 |
| 236 | 1.3.6.1 | Contratar estudio de suelos | 10d | 2019-07-17 09:00 | 2019-07-30 19:00 | 242 | 11.5d | 0d | Director de obra [16%]; Director administrativo [9%]; Equipos celulares | 13.44h | 272,138 |
| 237 | 1.3.6.2 | Contratar topografía | 10d | 2019-07-17 09:00 | 2019-07-30 19:00 | 242, 236SS | 11.5d | 0d | Director de obra [16%]; Director administrativo [9%]; Equipos celulares | 19.2h | 416,138 |
| 238 | 1.3.6.3 | Contratar mensajería para trámites | 5d | 2019-07-17 09:00 | 2019-07-23 19:00 | 242 | 16.5d |  | Director administrativo [9%]; Equipos celulares | 3.6h | 90,138 |
| 239 | 1.3.6.4 | Cuantificar honorarios del personal de calidad | 2d | 2019-07-17 09:00 | 2019-07-18 19:00 | 242 | 19.5d |  | Director administrativo [9%]; Equipos celulares | 1.44h | 36,138 |
| 240 | 1.3.6.5 | Certificación RETIE y RETILAP | 15d | 2019-07-17 09:00 | 2019-08-06 19:00 | 242 | 6.5d |  | Director de obra [16%]; Director administrativo [9%]; Equipos celulares | 28.8h | 624,138 |
| 241 | 1.3.6.6 | Contrato laboratorio para análisis de materiales | 7d | 2019-07-17 09:00 | 2019-07-25 19:00 | 242 | 14.5d |  | Director de obra [16%]; Director administrativo [9%]; Equipos celulares | 9.41h | 190,538 |

| ID | WBS | Task | Duration | Start | Finish | Predecessors | Total slack | Free slack | Resources | Work | Cost |
| --- | --- | --- | --- | --- | --- | --- | --- | --- | --- | --- | --- |
| 242 | 1.3.7 | **Contratos equipo de trabajo** | 60d | 2019-04-24 09:00 | 2019-07-16 19:00 | 516 | 0.12d | 0d |  | 422.4h | 12,961,579.2 |
| 243 | 1.3.7.1 | Asesor jurídico | 30d | 2019-04-24 09:00 | 2019-06-04 19:00 | 516 | 30.12d |  | Gerente de proyectos [20%]; Equipos celulares | 48h | 2,400,138 |
| 244 | 1.3.7.2 | Jefe de talento humano | 30d | 2019-04-24 09:00 | 2019-06-04 19:00 | 516 | 0.12d | 0d | Gerente de proyectos [20%]; Equipos celulares | 48h | 2,400,138 |
| 245 | 1.3.7.3 | Auxiliar contable | 30d | 2019-06-05 09:00 | 2019-07-16 19:00 | 244 | 0.12d |  | Asesor jurídico [0.1%]; Jefe de talento humano [12%]; Equipos celulares | 28.8h | 420,128.4 |
| 246 | 1.3.7.4 | Director administrativo | 30d | 2019-04-24 09:00 | 2019-06-04 19:00 | 516 | 30.12d | 30d | Gerente de proyectos [20%]; Equipos celulares | 48h | 2,400,138 |
| 247 | 1.3.7.5 | Director de obra | 30d | 2019-04-24 09:00 | 2019-06-04 19:00 | 516 | 30.12d |  | Gerente de proyectos [20%]; Equipos celulares | 48h | 2,400,138 |
| 248 | 1.3.7.6 | Residente de obra | 30d | 2019-06-05 09:00 | 2019-07-16 19:00 | 244 | 0.12d |  | Asesor jurídico [0.1%]; Jefe de talento humano [12%]; Equipos celulares | 28.8h | 420,128.4 |
| 249 | 1.3.7.7 | Jefe de ingeniería | 30d | 2019-06-05 09:00 | 2019-07-16 19:00 | 244 | 0.12d | 0d | Asesor jurídico [0.1%]; Jefe de talento humano [12%]; Equipos celulares | 28.8h | 420,128.4 |
| 250 | 1.3.7.8 | Jefe de calidad | 30d | 2019-06-05 09:00 | 2019-07-16 19:00 | 244 | 0.12d |  | Asesor jurídico [0.1%]; Jefe de talento humano [12%]; Equipos celulares | 28.8h | 420,128.4 |
| 251 | 1.3.7.9 | Profesional HSEQ | 30d | 2019-06-05 09:00 | 2019-07-16 19:00 | 244 | 0.12d |  | Asesor jurídico [0.1%]; Jefe de talento humano [12%]; Equipos celulares | 28.8h | 420,128.4 |
| 252 | 1.3.7.10 | Tecnólogo civil | 30d | 2019-06-05 09:00 | 2019-07-16 19:00 | 244 | 0.12d |  | Asesor jurídico [0.1%]; Jefe de talento humano [12%]; Equipos celulares | 28.8h | 420,128.4 |
| 253 | 1.3.7.11 | Tecnólogo de sistemas | 30d | 2019-06-05 09:00 | 2019-07-16 19:00 | 244 | 0.12d |  | Asesor jurídico [0.1%]; Jefe de talento humano [12%]; Equipos celulares | 28.8h | 420,128.4 |
| 254 | 1.3.7.12 | Grupo de apoyo - ayudantes | 30d | 2019-06-05 09:00 | 2019-07-16 19:00 | 244 | 0.12d |  | Asesor jurídico [0.1%]; Jefe de talento humano [12%]; Equipos celulares | 28.8h | 420,128.4 |
| 255 | 1.4 | **CONSTRUCCION** | 276.88d | 2019-11-11 18:00 | 2020-12-02 17:00 | 68 | 0.12d | 0d |  | 4657.08h | 82,362,633.5 |
| 256 | 1.4.1 | **Obra Civil** | 258d | 2019-11-11 18:00 | 2020-11-05 18:00 | 69 | 0.12d |  |  | 3077h | 59,622,625 |
| 257 | 1.4.1.1 | **Preliminares generales** | 10.38d | 2019-11-11 18:00 | 2019-11-26 11:00 | 176 | 0.12d | 0d |  | 63h | 2,380,715 |
| 258 | 1.4.1.1.1 | Cerramiento en lona verde con parales en madera anclados al piso (amarre en alambre) h = 2,00 m | 2h | 2019-11-11 18:00 | 2019-11-12 10:00 | 176 | 0.12d | 0d | Ayudante de obra [50%] | 1h | 3,074 |
| 259 | 1.4.1.1.2 | Demolición placa de concreto existente | 4h | 2019-11-14 12:00 | 2019-11-14 18:00 | 260 | 0.12d | 0d | Retroexcavadora [0.1%] |  | 200,000 |
| 260 | 1.4.1.1.3 | Demolición de mampostería existente | 5h | 2019-11-13 17:00 | 2019-11-14 12:00 | 263 | 0.12d | 0d | Retroexcavadora [0.1%] |  | 250,000 |
| 261 | 1.4.1.1.4 | Demolición de vigas, cimientos de concreto, Incluye cargue y retiro de escombros. | 2h | 2019-11-14 18:00 | 2019-11-15 10:00 | 259 | 0.12d | 0d | Retroexcavadora [0.1%]; Volqueta [0.1%] |  | 130,000 |
| 262 | 1.4.1.1.5 | Desmonte de aparatos sanitarios y posible reutilización (lavamanos, sanitarios, etc.), incluye cargue y retiro de escombros. | 2h | 2019-11-12 10:00 | 2019-11-12 12:00 | 258 | 0.12d | 0d | Ayudante de obra [50%]; Tecnólogo civil [50%]; Retroexcavadora [0.1%]; Volqueta [0.1%] | 2h | 145,074 |
| 263 | 1.4.1.1.6 | Desmonte de cubierta de asbesto cemento. Incluye retiro. | 4h | 2019-11-13 11:00 | 2019-11-13 17:00 | 267 | 0.12d | 0d | Ayudante de obra [50%]; Tecnólogo civil [50%]; Retroexcavadora [0.1%]; Volqueta [0.1%] | 4h | 290,148 |
| 264 | 1.4.1.1.7 | Desmonte de puertas existentes (madera - metálicas), incluye marco, retiro y cargue. | 2h | 2019-11-12 12:00 | 2019-11-12 16:00 | 262 | 0.12d | 0d | Ayudante de obra [50%]; Tecnólogo civil [50%]; Retroexcavadora [0.1%]; Volqueta [0.1%] | 2h | 145,074 |
| 265 | 1.4.1.1.8 | Desmonte de ventanas pequeñas existentes hasta 1,0 m2 (metálicas - madera) incluye vidrio y rejas para posible reutilización. Incluye retiro y cargue | 2h | 2019-11-12 16:00 | 2019-11-12 18:00 | 264 | 0.12d | 0d | Ayudante de obra [50%]; Tecnólogo civil [50%] | 2h | 15,074 |
| 266 | 1.4.1.1.9 | Desmonte de muebles existentes, altos o bajos, de madera y/o metálicos, incluye cargue y retiro. | 1h | 2019-11-12 18:00 | 2019-11-12 19:00 | 265 | 0.12d | 0d | Ayudante de obra [50%]; Tecnólogo civil [50%] | 1h | 7,537 |
| 267 | 1.4.1.1.10 | Desmonte de rejas de cerramiento metálico, para posible reutilización. Incluye cargue y retiro. | 2h | 2019-11-13 09:00 | 2019-11-13 11:00 | 266 | 0.12d | 0d | Ayudante de obra [50%]; Tecnólogo civil [50%] | 2h | 15,074 |
| 268 | 1.4.1.1.11 | Relleno con material de la excavación | 4h | 2019-11-25 11:00 | 2019-11-25 17:00 | 271 | 0.12d | 0d | Retroexcavadora [0.1%]; Volqueta [0.1%] |  | 260,000 |
| 269 | 1.4.1.1.12 | Señales y Protecciones, comprenden Señales Preventivas (SP), Señales Reglamentarias (SR) y Señales Informativas (SI): 30 Un/mes. Barreras de cinta plástica reflectiva: 1000m/mes y demás obras para la señalización, protección y seguridad requeridas para | 4h | 2019-11-22 10:00 | 2019-11-22 16:00 | 273 | 0.12d | 0d | Proveedor de servicios de consultoría en HSEQ [0.1%]; Tecnólogo civil [50%] | 2h | 44,000 |
| 270 | 1.4.1.1.13 | Desmonte y traslado de medidor de agua y eléctrico existentes | 4h | 2019-11-22 16:00 | 2019-11-25 10:00 | 269 | 0.12d | 0d | Tecnólogo civil [50%]; Tecnólogo electromecánico | 6h | 72,000 |
| 271 | 1.4.1.1.14 | Instalación valla informativa según diseño curaduría | 1h | 2019-11-25 10:00 | 2019-11-25 11:00 | 270 | 0.12d | 0d | Tecnólogo electromecánico | 1h | 12,000 |
| 272 | 1.4.1.1.15 | Limpieza, descapote y retiro de sobrantes e = 0,20 m | 4h | 2019-11-25 17:00 | 2019-11-26 11:00 | 268 | 0.12d |  | Retroexcavadora [0.1%]; Volqueta [0.1%] |  | 260,000 |
| 273 | 1.4.1.1.16 | Facilidades temporales | 5d | 2019-11-15 10:00 | 2019-11-22 10:00 | 261 | 0.12d | 0d | Residente de obra [50%]; Tecnólogo civil [50%] | 40h | 531,660 |

| ID | WBS | Task | Duration | Start | Finish | Predecessors | Total slack | Free slack | Resources | Work | Cost |
| --- | --- | --- | --- | --- | --- | --- | --- | --- | --- | --- | --- |
| 274 | 1.4.1.2 | **Excavaciones, rellenos y varios** | 4.25d | 2019-11-26 11:00 | 2019-12-02 13:00 | 257 | 0.12d | 0d |  |  | 1,550,000 |
| 275 | 1.4.1.2.1 | Excavación manual en material común, incluye cargue y retiro de escombros. | 6h | 2019-11-26 11:00 | 2019-11-26 19:00 | 257 | 0.12d | 0d | Piloteadora [0.1%]; Retroexcavadora [0.1%]; Volqueta [0.1%] |  | 510,000 |
| 276 | 1.4.1.2.2 | Base en recebo compactado B-200 | 8h | 2019-11-28 15:00 | 2019-11-29 13:00 | 275, 333 | 0.12d | 0d | Retroexcavadora [0.1%]; Volqueta [0.1%] |  | 520,000 |
| 277 | 1.4.1.2.3 | Base en recebo compactado B-400 | 4h | 2019-11-29 15:00 | 2019-11-29 19:00 | 276 | 0.12d | 0d | Retroexcavadora [0.1%]; Volqueta [0.1%] |  | 260,000 |
| 278 | 1.4.1.2.4 | Base en concreto pobre e=0,05 M f'c=2000 psi | 4h | 2019-12-02 09:00 | 2019-12-02 13:00 | 277 | 0.12d |  | Retroexcavadora [0.1%]; Volqueta [0.1%] |  | 260,000 |
| 279 | 1.4.1.3 | **Concretos** | 77d | 2019-12-02 15:00 | 2020-03-18 13:00 | 274 | 0.12d | 0d |  | 1360h | 17,362,656 |
| 280 | 1.4.1.3.1 | Concreto ciclópeo 3000 PSI (60% concreto,40% piedra) | 8d | 2019-12-02 15:00 | 2019-12-12 13:00 | 274 | 0.12d | 0d | Ayudante de obra [50%]; Tecnólogo civil [50%]; Mezcladora de concreto [0.1%]; Residente de obra | 128h | 1,703,680 |
| 281 | 1.4.1.3.2 | Zapatas en concreto de 3000 psi | 8d | 2019-12-12 15:00 | 2019-12-24 13:00 | 280 | 0.12d | 0d | Ayudante de obra [50%]; Tecnólogo civil [50%]; Mezcladora de concreto [0.1%]; Residente de obra | 128h | 1,703,680 |
| 282 | 1.4.1.3.3 | Viga de amarre en concreto de 3000 psi | 8d | 2019-12-24 15:00 | 2020-01-03 13:00 | 281 | 0.12d | 0d | Ayudante de obra [50%]; Tecnólogo civil [50%]; Mezcladora de concreto [0.1%]; Residente de obra | 128h | 1,703,680 |
| 283 | 1.4.1.3.4 | Placa de contrapiso en concreto de 3000 psi de e = 10 cm | 8d | 2020-01-03 15:00 | 2020-01-15 13:00 | 282 | 0.12d | 0d | Ayudante de obra [50%]; Tecnólogo civil [50%]; Mezcladora de concreto [0.1%]; Residente de obra | 128h | 1,703,680 |
| 284 | 1.4.1.3.5 | Columnas en concreto 3000 PSI a la vista. | 8d | 2020-01-15 15:00 | 2020-01-27 13:00 | 283 | 0.12d | 0d | Ayudante de obra [50%]; Tecnólogo civil [50%]; Mezcladora de concreto [0.1%]; Residente de obra | 128h | 1,703,680 |
| 285 | 1.4.1.3.6 | Viga aérea en concreto a la vista de3000 psi. | 8d | 2020-01-27 15:00 | 2020-02-06 13:00 | 284 | 0.12d | 0d | Ayudante de obra [50%]; Tecnólogo civil [50%]; Mezcladora de concreto [0.1%]; Residente de obra | 128h | 1,703,680 |
| 286 | 1.4.1.3.7 | Viga canal en concreto de 3000 PSI impermeabilizado. incluye acabado a la vista | 5d | 2020-02-06 15:00 | 2020-02-13 13:00 | 285 | 0.12d | 0d | Ayudante de obra [50%]; Tecnólogo civil [50%]; Mezcladora de concreto [0.1%]; Residente de obra | 80h | 1,064,800 |
| 287 | 1.4.1.3.8 | Placa maciza aérea, concreto de 3000 PSI. | 8d | 2020-02-13 15:00 | 2020-02-25 13:00 | 286 | 0.12d | 0d | Ayudante de obra [50%]; Tecnólogo civil [50%]; Mezcladora de concreto [0.1%]; Residente de obra | 128h | 1,703,680 |
| 288 | 1.4.1.3.9 | Rampa de acceso en concreto de 3000 psi | 3d | 2020-02-25 15:00 | 2020-02-28 13:00 | 287 | 0.12d | 0d | Ayudante de obra; Tecnólogo civil; Mezcladora de concreto [0.1%]; Residente de obra | 72h | 819,768 |
| 289 | 1.4.1.3.10 | **Elementos en concreto** | 13d | 2020-02-28 15:00 | 2020-03-18 13:00 | 288 | 0.12d |  |  | 312h | 3,552,328 |
| 290 | 1.4.1.3.10.1 | Mesones en concreto enchapados en granito pulido blanco | 4d | 2020-02-28 15:00 | 2020-03-05 13:00 | 288 | 0.12d | 0d | Ayudante de obra; Tecnólogo civil; Mezcladora de concreto [0.1%]; Residente de obra | 96h | 1,093,024 |
| 291 | 1.4.1.3.10.2 | Dinteles en concreto | 5d | 2020-03-05 15:00 | 2020-03-12 13:00 | 290 | 0.12d | 0d | Ayudante de obra; Tecnólogo civil; Mezcladora de concreto [0.1%]; Residente de obra | 120h | 1,366,280 |
| 292 | 1.4.1.3.10.3 | Alfajía en concreto | 4d | 2020-03-12 15:00 | 2020-03-18 13:00 | 291 | 0.12d |  | Ayudante de obra; Tecnólogo civil; Mezcladora de concreto [0.1%]; Residente de obra | 96h | 1,093,024 |
| 293 | 1.4.1.4 | **Refuerzos** | 35.75d | 2020-03-18 15:00 | 2020-05-07 11:00 | 279 | 0.12d | 0d |  | 614h | 8,096,406 |
| 294 | 1.4.1.4.1 | Malla electrosoldada 5 mm, de 0,15 x 0,15 m | 4h | 2020-03-18 15:00 | 2020-03-18 19:00 | 279 | 0.12d | 0d | Tecnólogo civil; Tecnólogo electromecánico | 8h | 96,000 |
| 295 | 1.4.1.4.2 | Acero de Refuerzo de 60000 psi | 15d | 2020-03-19 09:00 | 2020-04-08 19:00 | 294 | 0.12d | 0d | Residente de obra | 120h | 1,749,960 |
| 296 | 1.4.1.4.3 | Estructura metálica para cubierta, incluye perfiles, anclajes y platinas según planos | 20d | 2020-04-09 09:00 | 2020-05-06 19:00 | 295 | 0.12d | 0d | Residente de obra; Tecnólogo civil; Tecnólogo electromecánico | 480h | 6,173,280 |
| 297 | 1.4.1.4.4 | Anclaje metálico diámetro 1/2 " , incluye ángulo de fijación de 2 " x 3/16 " , con anticorrosivo y esmalte | 2h | 2020-05-07 09:00 | 2020-05-07 11:00 | 296 | 0.12d |  | Residente de obra; Tecnólogo civil; Tecnólogo electromecánico | 6h | 77,166 |

| ID | WBS | Task | Duration | Start | Finish | Predecessors | Total slack | Free slack | Resources | Work | Cost |
| --- | --- | --- | --- | --- | --- | --- | --- | --- | --- | --- | --- |
| 298 | 1.4.1.5 | **Mampostería** | 28d | 2020-05-07 11:00 | 2020-06-16 11:00 | 293 | 0.12d | 0d |  | 384h | 2,608,576 |
| 299 | 1.4.1.5.1 | Mampostería en tolete fino liviano a la vista dos caras e =0,12 m. | 20d | 2020-05-07 11:00 | 2020-06-04 11:00 | 293 | 0.12d | 0d | Ayudante de obra; Tecnólogo civil | 320h | 2,411,840 |
| 300 | 1.4.1.5.2 | Lavado con Hidrófugo en muros en ladrillo a la vista. | 8d | 2020-06-04 11:00 | 2020-06-16 11:00 | 299 | 0.12d |  | Ayudante de obra | 64h | 196,736 |
| 301 | 1.4.1.6 | **Pisos** | 20d | 2020-07-15 11:00 | 2020-08-12 11:00 | 306 | 80.62d |  |  | 320h | 2,411,840 |
| 302 | 1.4.1.6.1 | Alistado de pisos en mortero 1:4 Impermeabilizado e=0,04m | 5d | 2020-07-15 11:00 | 2020-07-22 11:00 | 306 | 80.62d | 0d | Ayudante de obra; Tecnólogo civil | 80h | 602,960 |
| 303 | 1.4.1.6.2 | Piso de caucho de color y textura 50x50 cms y e=6 mm | 5d | 2020-07-22 11:00 | 2020-07-29 11:00 | 302 | 80.62d | 0d | Ayudante de obra; Tecnólogo civil | 80h | 602,960 |
| 304 | 1.4.1.6.3 | Guarda escoba en madera cedro para área de piso en caucho h=0,10 m. | 3d | 2020-07-29 11:00 | 2020-08-03 11:00 | 303 | 80.62d | 0d | Ayudante de obra; Tecnólogo civil | 48h | 361,776 |
| 305 | 1.4.1.6.4 | Guarda escoba en media caña en concreto | 7d | 2020-08-03 11:00 | 2020-08-12 11:00 | 304 | 80.62d |  | Ayudante de obra; Tecnólogo civil | 112h | 844,144 |
| 306 | 1.4.1.7 | **Acabado de muros** | 21d | 2020-06-16 11:00 | 2020-07-15 11:00 | 298 | 0.12d | 0d |  | 336h | 2,532,432 |
| 307 | 1.4.1.7.1 | Enchape de pared 20cm*20 cm, color blanco mate | 7d | 2020-06-16 11:00 | 2020-06-25 11:00 | 298 | 0.12d | 0d | Ayudante de obra; Tecnólogo civil | 112h | 844,144 |
| 308 | 1.4.1.7.2 | Pañete impermeabilizado | 7d | 2020-06-25 11:00 | 2020-07-06 11:00 | 307 | 0.12d | 0d | Ayudante de obra; Tecnólogo civil | 112h | 844,144 |
| 309 | 1.4.1.7.3 | Graniplast | 7d | 2020-07-06 11:00 | 2020-07-15 11:00 | 308 | 0.12d |  | Ayudante de obra; Tecnólogo civil | 112h | 844,144 |
| 310 | 1.4.1.8 | **Vidrieras** | 33d | 2020-09-21 18:00 | 2020-11-05 18:00 | 371 | 19d |  |  |  | 22,680,000 |
| 311 | 1.4.1.8.1 | Cerramiento de carrusel en vidrio | 15d | 2020-09-21 18:00 | 2020-10-12 18:00 | 371 | 19d | 0d | Proveedor carpinteria metalica [0.1%] |  | 20,000,000 |
| 312 | 1.4.1.8.2 | Vidrieras taquilla | 8d | 2020-10-12 18:00 | 2020-10-22 18:00 | 311 | 19d | 0d | Proveedor carpinteria metalica [0.1%] |  | 1,000,000 |
| 313 | 1.4.1.8.3 | Ventanas de cuartos técnicos | 8d | 2020-10-22 18:00 | 2020-11-03 18:00 | 312 | 19d | 0d | Proveedor carpinteria metalica [0.1%] |  | 1,344,000 |
| 314 | 1.4.1.8.4 | Ventana baño | 2d | 2020-11-03 18:00 | 2020-11-05 18:00 | 313 | 19d |  | Proveedor carpinteria metalica [0.1%] |  | 336,000 |
| 315 | 1.4.2 | **Sistema eléctrico y puesta a tierra** | 213.25d | 2019-11-27 09:00 | 2020-09-21 11:00 | 275, 96, 181 | 0.12d | 0d |  | 401.08h | 2,752,545 |
| 316 | 1.4.2.1 | **Interruptores y tableros** | 2d | 2020-08-13 11:00 | 2020-08-17 11:00 | 321 | 0.12d | 0d |  | 12h | 50,004 |
| 317 | 1.4.2.1.1 | Interruptor sencillo (suministro e instalación) | 2d | 2020-08-13 11:00 | 2020-08-17 11:00 | 321 | 0.12d |  | Ayudante electricista [25%] | 4h | 16,668 |
| 318 | 1.4.2.1.2 | Interruptor conmutable sencillo (suministro e instalación) | 2d | 2020-08-13 11:00 | 2020-08-17 11:00 | 321 | 0.12d |  | Ayudante electricista [25%] | 4h | 16,668 |
| 319 | 1.4.2.1.3 | Tablero eléctrico | 1d | 2020-08-13 11:00 | 2020-08-14 11:00 | 321 | 1.12d |  | Ayudante electricista [25%] | 2h | 8,334 |
| 320 | 1.4.2.1.4 | Caja para medidor de energía eléctrica | 1d | 2020-08-13 11:00 | 2020-08-14 11:00 | 321 | 1.12d |  | Ayudante electricista [25%] | 2h | 8,334 |
| 321 | 1.4.2.2 | **Tubería conduit PVC** | 19d | 2020-07-17 11:00 | 2020-08-13 11:00 | 326SS+2d | 0.12d | 0d |  | 90h | 375,030 |
| 322 | 1.4.2.2.1 | Tubería de 3/4 " PVC | 15d | 2020-07-17 11:00 | 2020-08-07 11:00 | 326SS+2d | 0.12d | 0d | Ayudante electricista [25%] | 30h | 125,010 |
| 323 | 1.4.2.2.2 | Tubería de 1 " PVC | 15d | 2020-07-21 11:00 | 2020-08-11 11:00 | 322SS+2d | 0.12d | 0d | Ayudante electricista [25%] | 30h | 125,010 |
| 324 | 1.4.2.2.3 | Tubería de 1 1/4 " PVC | 15d | 2020-07-23 11:00 | 2020-08-13 11:00 | 323SS+2d | 0.12d |  | Ayudante electricista [25%] | 30h | 125,010 |

| ID | WBS | Task | Duration | Start | Finish | Predecessors | Total slack | Free slack | Resources | Work | Cost |
| --- | --- | --- | --- | --- | --- | --- | --- | --- | --- | --- | --- |
| 325 | 1.4.2.3 | **Tubería EMT** | 7.5d | 2020-07-15 11:00 | 2020-07-24 17:00 | 96, 306, 181 | 0.12d |  |  | 15h | 62,505 |
| 326 | 1.4.2.3.1 | Tubería EMT 1" | 7.5d | 2020-07-15 11:00 | 2020-07-24 17:00 | 96, 306, 181 | 0.12d | 0d | Ayudante electricista [25%] | 15h | 62,505 |
| 327 | 1.4.2.4 | **Salidas eléctricas** | 25d | 2020-08-17 11:00 | 2020-09-21 11:00 | 316 | 0.12d |  |  | 260.08h | 2,040,006 |
| 328 | 1.4.2.4.1 | Salida alumbrado | 15d | 2020-08-17 11:00 | 2020-09-07 11:00 | 316 | 0.12d | 0d | Ayudante electricista [50%]; Tecnólogo electromecánico [33%] | 99.6h | 725,220 |
| 329 | 1.4.2.4.2 | Salida para aviso luminoso. Hasta 7 m. | 1d | 2020-09-18 11:00 | 2020-09-21 11:00 | 332 | 0.12d |  | Ayudante electricista; Tecnólogo electromecánico | 16h | 129,336 |
| 330 | 1.4.2.4.3 | Salida para tomacorriente doble con polo a tierra monofásico Hasta 9 m (suministro e instalación) | 7d | 2020-08-26 11:00 | 2020-09-04 11:00 | 328SS+7d | 0.12d | 0d | Ayudante electricista [25%]; Tecnólogo electromecánico [33%] | 32.48h | 280,098 |
| 331 | 1.4.2.4.4 | Salida para tomacorriente doble con polo a tierra monofásico tipo GFCI Hasta 9 m (suministro e instalación) | 7d | 2020-09-02 11:00 | 2020-09-11 11:00 | 330SS+5d | 0.12d | 0d | Ayudante electricista [25%]; Tecnólogo electromecánico [33%] | 32.48h | 280,098 |
| 332 | 1.4.2.4.5 | Salida para tomacorriente trifásica 50A Hasta 6 m (suministro e instalación) | 7d | 2020-09-09 11:00 | 2020-09-18 11:00 | 331SS+5d | 0.12d | 0d | Ayudante electricista [75%]; Tecnólogo electromecánico [67%] | 79.52h | 625,254 |
| 333 | 1.4.2.5 | **Sistemas de puesta a tierra** | 1.5d | 2019-11-27 09:00 | 2019-11-28 13:00 | 275 | 0.12d | 0d |  | 24h | 225,000 |
| 334 | 1.4.2.5.1 | Punta Captora de cobre de 0,60 cm x 5/8 " . Incluye soporte y conectores. | 1h | 2019-11-27 09:00 | 2019-11-27 10:00 | 275 | 0.12d | 0d | Ayudante electricista; Jefe de ingenieria | 2h | 18,750 |
| 335 | 1.4.2.5.2 | Cable Nº 2 Desnudo | 1h | 2019-11-27 10:00 | 2019-11-27 11:00 | 334 | 0.12d | 0d | Ayudante electricista; Jefe de ingenieria | 2h | 18,750 |
| 336 | 1.4.2.5.3 | Cable Nº 2/0 Desnudo enterrado a 0,5m mínimo | 1h | 2019-11-27 11:00 | 2019-11-27 12:00 | 335 | 0.12d | 0d | Ayudante electricista; Jefe de ingenieria | 2h | 18,750 |
| 337 | 1.4.2.5.4 | Aislador para cable Nº 2 - 55 mm con pernos de fijación | 1h | 2019-11-27 12:00 | 2019-11-27 13:00 | 336 | 0.12d | 0d | Ayudante electricista; Jefe de ingenieria | 2h | 18,750 |
| 338 | 1.4.2.5.5 | Varilla de cobre 2,4X5/8 " | 1h | 2019-11-27 15:00 | 2019-11-27 16:00 | 337 | 0.12d | 0d | Ayudante electricista; Jefe de ingenieria | 2h | 18,750 |
| 339 | 1.4.2.5.6 | Caja de Inspección de 30 x 30 cm similar a CS 280 Codensa | 4h | 2019-11-27 16:00 | 2019-11-28 10:00 | 338 | 0.12d | 0d | Ayudante electricista; Jefe de ingenieria | 8h | 75,000 |
| 340 | 1.4.2.5.7 | Suministro y Ejecución de Soldadura CAD WELLD | 3h | 2019-11-28 10:00 | 2019-11-28 13:00 | 339 | 0.12d |  | Ayudante electricista; Jefe de ingenieria | 6h | 56,250 |
| 341 | 1.4.3 | **Sistema de carrusel** | 50.38d | 2020-09-21 11:00 | 2020-11-30 16:00 | 108, 315 | 0.12d | 0d |  | 790h | 13,669,621 |
| 342 | 1.4.3.1 | **Estructura** | 35.62d | 2020-09-21 11:00 | 2020-11-09 18:00 | 108, 315 | 0.12d | 0d |  | 650h | 11,932,795 |
| 343 | 1.4.3.1.1 | Ensamble de la estructura principal derecha del carrusel | 15d | 2020-09-21 11:00 | 2020-10-12 11:00 | 108, 315 | 0.12d | 0d | Grúa telescopica [0.1%]; Jefe de ingenieria; Residente de obra; Tecnólogo electromecánico | 360h | 7,939,920 |
| 344 | 1.4.3.1.2 | Instalación de los motores | 15d | 2020-10-12 11:00 | 2020-11-02 11:00 | 343 | 0.12d | 0d | Tecnólogo electromecánico; Jefe de ingenieria | 240h | 3,189,960 |
| 345 | 1.4.3.1.3 | Instalación de piñones y cadena | 5d | 2020-11-02 11:00 | 2020-11-09 11:00 | 344 | 0.12d | 0d | Tecnólogo electromecánico | 40h | 480,000 |
| 346 | 1.4.3.1.4 | Izaje de la estructura principal y anclaje | 5h | 2020-11-09 11:00 | 2020-11-09 18:00 | 345 | 0.12d |  | Director de obra; Grúa telescopica [0.1%]; Jefe de ingenieria | 10h | 322,915 |
| 347 | 1.4.3.2 | **Plataformas** | 10.25d | 2020-11-09 18:00 | 2020-11-24 10:00 | 342 | 0.12d | 0d |  | 84h | 1,013,166 |
| 348 | 1.4.3.2.1 | Montaje e instalación de la plataforma 1 | 5h | 2020-11-09 18:00 | 2020-11-10 13:00 | 342 | 0.12d | 0d | Tecnólogo electromecánico | 5h | 60,000 |
| 349 | 1.4.3.2.2 | Montaje e instalación de las 15 plataformas restantes | 75h | 2020-11-10 15:00 | 2020-11-23 18:00 | 348 | 0.12d | 0d | Tecnólogo electromecánico | 75h | 900,000 |
| 350 | 1.4.3.2.3 | Revisión de giro del carrusel | 2h | 2020-11-23 18:00 | 2020-11-24 10:00 | 349 | 0.12d |  | Jefe de ingenieria; Tecnólogo electromecánico | 4h | 53,166 |

| ID | WBS | Task | Duration | Start | Finish | Predecessors | Total slack | Free slack | Resources | Work | Cost |
| --- | --- | --- | --- | --- | --- | --- | --- | --- | --- | --- | --- |
| 351 | 1.4.3.3 | **Motores y transmisión de movimiento** | 1d | 2020-11-24 10:00 | 2020-11-25 10:00 | 347 | 0.12d | 0d |  | 16h | 212,664 |
| 352 | 1.4.3.3.1 | Ajustes de los motores en cada estructura | 2h | 2020-11-24 10:00 | 2020-11-24 12:00 | 347 | 0.12d | 0d | Jefe de ingenieria; Tecnólogo electromecánico | 4h | 53,166 |
| 353 | 1.4.3.3.2 | Ajuste de las cadenas en cada estructura | 2h | 2020-11-24 12:00 | 2020-11-24 16:00 | 352 | 0.12d | 0d | Jefe de ingenieria; Tecnólogo electromecánico | 4h | 53,166 |
| 354 | 1.4.3.3.3 | Revisión de giro completo de las plataformas | 4h | 2020-11-24 16:00 | 2020-11-25 10:00 | 353 | 0.12d |  | Jefe de ingenieria; Tecnólogo electromecánico | 8h | 106,332 |
| 355 | 1.4.3.4 | **Sistema de control de acceso** | 3.5d | 2020-11-25 10:00 | 2020-11-30 16:00 | 351 | 0.12d |  |  | 40h | 510,996 |
| 356 | 1.4.3.4.1 | Montaje e instalación del sistema de control de acceso | 12h | 2020-11-25 10:00 | 2020-11-26 16:00 | 351 | 0.12d | 0d | Jefe de ingenieria; Tecnólogo electromecánico | 24h | 318,996 |
| 357 | 1.4.3.4.2 | Instalación de las luces de emergencia y operación | 12h | 2020-11-26 16:00 | 2020-11-30 10:00 | 356 | 0.12d | 0d | Tecnólogo electromecánico | 12h | 144,000 |
| 358 | 1.4.3.4.3 | Ubicación e instalación de sensores y actuadores | 4h | 2020-11-30 10:00 | 2020-11-30 16:00 | 357 | 0.12d |  | Tecnólogo electromecánico | 4h | 48,000 |
| 359 | 1.4.4 | **Automatización y control** | 2.12d | 2020-11-30 16:00 | 2020-12-02 17:00 | 121, 341, 371 | 0.12d | 0d |  |  | 800,000 |
| 360 | 1.4.4.1 | **Sistema digital de facturación** | 1.38d | 2020-11-30 16:00 | 2020-12-01 19:00 | 121, 341, 371 | 0.88d |  |  |  | 220,000 |
| 361 | 1.4.4.1.1 | Alistamiento de equipos | 3h | 2020-11-30 16:00 | 2020-11-30 19:00 | 121, 341, 371 | 0.88d | 0d | Proveedor de sistema digital de facturación [0.1%] |  | 20,000 |
| 362 | 1.4.4.1.2 | Implementación del software de facturación | 4h | 2020-12-01 09:00 | 2020-12-01 13:00 | 361 | 0.88d | 0d | Proveedor de sistema digital de facturación [0.1%] |  | 100,000 |
| 363 | 1.4.4.1.3 | Configuración de parámetros del software | 4h | 2020-12-01 15:00 | 2020-12-01 19:00 | 362 | 0.88d |  | Proveedor de sistema digital de facturación [0.1%] |  | 100,000 |
| 364 | 1.4.4.2 | **Sistema automatizado de parqueo** | 1d | 2020-11-30 16:00 | 2020-12-01 16:00 | 121, 341, 371 | 1.25d |  |  |  | 130,000 |
| 365 | 1.4.4.2.1 | Instalación de equipo lector de tarjeta | 5h | 2020-11-30 16:00 | 2020-12-01 11:00 | 121, 341, 371 | 1.25d | 0d | Proveedor de sistema automatizado de parqueo [0.1%] |  | 80,000 |
| 366 | 1.4.4.2.2 | Instalación del sofware de automatización de parqueo | 3h | 2020-12-01 11:00 | 2020-12-01 16:00 | 365 | 1.25d |  | Proveedor de sistema automatizado de parqueo [0.1%] |  | 50,000 |
| 367 | 1.4.4.3 | **Sistema de alarmas y seguridad** | 2.12d | 2020-11-30 16:00 | 2020-12-02 17:00 | 121, 341, 371 | 0.12d |  |  |  | 450,000 |
| 368 | 1.4.4.3.1 | Instalación de cámaras y sensores | 12h | 2020-11-30 16:00 | 2020-12-02 10:00 | 121, 341, 371 | 0.12d | 0d | Proveedor de sistemas de alarmas y seguridad [0.1%] |  | 300,000 |
| 369 | 1.4.4.3.2 | Instalación y configuración del panel de alarmas y DVR | 2h | 2020-12-02 10:00 | 2020-12-02 12:00 | 368 | 0.12d | 0d | Proveedor de sistemas de alarmas y seguridad [0.1%] |  | 100,000 |
| 370 | 1.4.4.3.3 | Instalación y configuración del software de administración | 3h | 2020-12-02 12:00 | 2020-12-02 17:00 | 369 | 0.12d |  | Proveedor de sistemas de alarmas y seguridad [0.1%] |  | 50,000 |
| 371 | 1.4.5 | **Sistemas de apoyo** | 225d | 2019-11-11 18:00 | 2020-09-21 18:00 | 139 | 19d | 0d |  | 389h | 5,517,842.5 |
| 372 | 1.4.5.1 | **UPS** | 0.62d | 2020-09-21 11:00 | 2020-09-21 18:00 | 140, 315, 204 | 19d |  |  |  | 400,000 |
| 373 | 1.4.5.1.1 | Ubicación y conexión eléctrica de la UPS | 2h | 2020-09-21 11:00 | 2020-09-21 13:00 | 140, 315, 204 | 19d | 0d | Proveedor de UPS [0.1%] |  | 100,000 |
| 374 | 1.4.5.1.2 | Configuración y arranque de la UPS | 3h | 2020-09-21 15:00 | 2020-09-21 18:00 | 373 | 19d |  | Proveedor de UPS [0.1%] |  | 300,000 |

| ID | WBS | Task | Duration | Start | Finish | Predecessors | Total slack | Free slack | Resources | Work | Cost |
| --- | --- | --- | --- | --- | --- | --- | --- | --- | --- | --- | --- |
| 375 | 1.4.5.2 | **Aire acondicionado** | 0.88d | 2019-11-11 18:00 | 2019-11-12 17:00 | 143, 208 | 243.12d |  |  | 13h | 137,625 |
| 376 | 1.4.5.2.1 | Alistamiento de equipos, herramientas y materiales | 5h | 2019-11-11 18:00 | 2019-11-12 13:00 | 143, 208 | 243.12d | 0d | Ayudante electricista [50%]; Jefe de ingenieria [50%]; Tecnólogo electromecánico | 10h | 106,875 |
| 377 | 1.4.5.2.2 | Instalación y configuración de equipos | 2h | 2019-11-12 15:00 | 2019-11-12 17:00 | 376 | 243.12d |  | Ayudante electricista [50%]; Jefe de ingenieria [50%]; Tecnólogo electromecánico [50%] | 3h | 30,750 |
| 378 | 1.4.5.3 | **Cableado estructurado** | 3.38d | 2019-11-11 18:00 | 2019-11-15 11:00 | 147, 212 | 240.62d |  |  |  | 250,000 |
| 379 | 1.4.5.3.1 | Tendido de cableado estructurado | 12h | 2019-11-11 18:00 | 2019-11-13 12:00 | 147, 212 | 240.62d | 0d | Proveedor cableado y telecomunicaciones [0.1%] |  | 100,000 |
| 380 | 1.4.5.3.2 | Instalación de canaleta | 12h | 2019-11-13 12:00 | 2019-11-14 18:00 | 379 | 240.62d | 0d | Proveedor cableado y telecomunicaciones [0.1%] |  | 100,000 |
| 381 | 1.4.5.3.3 | Instalación de faceplate y jacks | 3h | 2019-11-14 18:00 | 2019-11-15 11:00 | 380 | 240.62d |  | Proveedor cableado y telecomunicaciones [0.1%] |  | 50,000 |
| 382 | 1.4.5.4 | **Sistema hidráulico** | 29d | 2019-11-11 18:00 | 2019-12-20 18:00 | 150, 215 | 215d |  |  | 357h | 3,396,842.5 |
| 383 | 1.4.5.4.1 | **Acometida** | 4d | 2019-11-11 18:00 | 2019-11-15 18:00 | 150, 215 | 215d | 0d |  | 66h | 688,387 |
| 384 | 1.4.5.4.1.1 | Tubería PVC-P diámetro 3/4 " | 12h | 2019-11-11 18:00 | 2019-11-13 12:00 | 150, 215 | 215d | 0d | Ayudante de obra [50%]; Residente de obra; Tecnólogo civil [50%] | 24h | 265,440 |
| 385 | 1.4.5.4.1.2 | Accesorios PVC-P diámetro 3/4 " | 12h | 2019-11-13 12:00 | 2019-11-14 18:00 | 384 | 215d | 0d | Ayudante de obra [50%]; Residente de obra; Tecnólogo civil [50%] | 24h | 265,440 |
| 386 | 1.4.5.4.1.3 | Registro R.W. 1 1/2 " o similar | 2h | 2019-11-14 18:00 | 2019-11-15 10:00 | 385 | 215d | 0d | Ayudante de obra; Residente de obra; Tecnólogo civil | 6h | 59,314 |
| 387 | 1.4.5.4.1.4 | Registro R.W. 3/4 " o similar | 2h | 2019-11-15 10:00 | 2019-11-15 12:00 | 386 | 215d | 0d | Ayudante de obra; Residente de obra [50%]; Tecnólogo civil [50%] | 4h | 32,731 |
| 388 | 1.4.5.4.1.5 | Caja para medidor de agua tipo gabinete - 1 medidor | 2h | 2019-11-15 12:00 | 2019-11-15 16:00 | 387 | 215d | 0d | Ayudante de obra; Residente de obra [50%]; Tecnólogo civil [50%] | 4h | 32,731 |
| 389 | 1.4.5.4.1.6 | Cheque horizontal Helbert o similar d= 1 1/2 " | 1h | 2019-11-15 16:00 | 2019-11-15 17:00 | 388 | 215d | 0d | Ayudante de obra; Residente de obra [50%]; Tecnólogo civil [50%] | 2h | 16,365.5 |
| 390 | 1.4.5.4.1.7 | Suministro e instalación Medidor de 3/4 " Tipo Velocidad | 1h | 2019-11-15 17:00 | 2019-11-15 18:00 | 389 | 215d |  | Ayudante de obra; Residente de obra [50%]; Tecnólogo civil [50%] | 2h | 16,365.5 |
| 391 | 1.4.5.4.2 | **Cuarto de máquinas** | 1.88d | 2019-11-15 18:00 | 2019-11-19 17:00 | 383 | 215d | 0d |  | 30h | 245,482.5 |
| 392 | 1.4.5.4.2.1 | Válvula de flotador 1 1/2 " Helbert o similar | 1h | 2019-11-15 18:00 | 2019-11-15 19:00 | 383 | 215d | 0d | Ayudante de obra; Residente de obra [50%]; Tecnólogo civil [50%] | 2h | 16,365.5 |
| 393 | 1.4.5.4.2.2 | Equipo hidroneumático marca BARNES Referencia 125059 o similar. | 5h | 2019-11-18 09:00 | 2019-11-18 16:00 | 392 | 215d | 0d | Ayudante de obra; Residente de obra [50%]; Tecnólogo civil [50%] | 10h | 81,827.5 |
| 394 | 1.4.5.4.2.3 | Tubería A.G. diámetro 2 " Tubería de rebose | 2h | 2019-11-18 16:00 | 2019-11-18 18:00 | 393 | 215d | 0d | Ayudante de obra; Residente de obra [50%]; Tecnólogo civil [50%] | 4h | 32,731 |
| 395 | 1.4.5.4.2.4 | Tubería A.G. diámetro 1 " Tubería a servicio | 2h | 2019-11-18 18:00 | 2019-11-19 10:00 | 394 | 215d | 0d | Ayudante de obra; Residente de obra [50%]; Tecnólogo civil [50%] | 4h | 32,731 |
| 396 | 1.4.5.4.2.5 | Accesorios de A.G. diámetro 2 " | 1h | 2019-11-19 10:00 | 2019-11-19 11:00 | 395 | 215d | 0d | Ayudante de obra; Residente de obra [50%]; Tecnólogo civil [50%] | 2h | 16,365.5 |
| 397 | 1.4.5.4.2.6 | Accesorios de A.G. diámetro 1 " | 1h | 2019-11-19 11:00 | 2019-11-19 12:00 | 396 | 215d | 0d | Ayudante de obra; Residente de obra [50%]; Tecnólogo civil [50%] | 2h | 16,365.5 |
| 398 | 1.4.5.4.2.7 | Tubería PVC-P diámetro 2 " | 1h | 2019-11-19 12:00 | 2019-11-19 13:00 | 397 | 215d | 0d | Ayudante de obra; Residente de obra [50%]; Tecnólogo civil [50%] | 2h | 16,365.5 |
| 399 | 1.4.5.4.2.8 | Tubería PVC-P diámetro 1 " | 1h | 2019-11-19 15:00 | 2019-11-19 16:00 | 398 | 215d | 0d | Ayudante de obra; Residente de obra [50%]; Tecnólogo civil [50%] | 2h | 16,365.5 |
| 400 | 1.4.5.4.2.9 | Accesorios PVC-P diámetro 2 " | 1h | 2019-11-19 16:00 | 2019-11-19 17:00 | 399 | 215d |  | Ayudante de obra; Residente de obra [50%]; Tecnólogo civil [50%] | 2h | 16,365.5 |

| ID | WBS | Task | Duration | Start | Finish | Predecessors | Total slack | Free slack | Resources | Work | Cost |
| --- | --- | --- | --- | --- | --- | --- | --- | --- | --- | --- | --- |
| 401 | 1.4.5.4.3 | **Instalaciones hidráulicas** | 4.62d | 2019-11-19 17:00 | 2019-11-26 12:00 | 391 | 215d | 0d |  | 81h | 706,313 |
| 402 | 1.4.5.4.3.1 | Tubería PVC RDE 21 diámetro 3/4 " , incluye accesorios | 12h | 2019-11-19 17:00 | 2019-11-21 11:00 | 391 | 215d | 0d | Ayudante de obra; Residente de obra [50%]; Tecnólogo civil [50%] | 24h | 196,386 |
| 403 | 1.4.5.4.3.2 | Tubería PVC RDE 21 diámetro 1/2 " , incluye accesorios | 12h | 2019-11-21 11:00 | 2019-11-22 17:00 | 402 | 215d | 0d | Ayudante de obra; Residente de obra [50%]; Tecnólogo civil [50%] | 24h | 196,386 |
| 404 | 1.4.5.4.3.3 | Puntos hidráulicos PVC diámetro 1/2 " ( 3m ) | 12h | 2019-11-22 17:00 | 2019-11-26 11:00 | 403 | 215d | 0d | Ayudante de obra; Residente de obra; Tecnólogo civil [50%] | 30h | 283,884 |
| 405 | 1.4.5.4.3.4 | Tapa registro PVC de 15 x 15 o 20 x 20 | 1h | 2019-11-26 11:00 | 2019-11-26 12:00 | 404 | 215d |  | Ayudante de obra; Residente de obra; Tecnólogo civil | 3h | 29,657 |
| 406 | 1.4.5.4.4 | **Instalaciones sanitarias** | 14.75d | 2019-11-26 12:00 | 2019-12-17 10:00 | 401 | 215d | 0d |  | 150h | 1,130,550 |
| 407 | 1.4.5.4.4.1 | Cajas de inspección en mampostería de 0.60 x 0.60. Incluye tapa en concreto reforzado de 3000 PSI y marco metálico. | 4h | 2019-11-26 12:00 | 2019-11-26 18:00 | 401 | 215d | 0d | Ayudante de obra; Tecnólogo civil | 8h | 60,296 |
| 408 | 1.4.5.4.4.2 | Puntos Sanitarios PVC de 4 " ( 2 m ) | 12h | 2019-11-26 18:00 | 2019-11-28 12:00 | 407 | 215d | 0d | Ayudante de obra; Tecnólogo civil | 24h | 180,888 |
| 409 | 1.4.5.4.4.3 | Puntos Sanitarios PVC de 2 " ( 2 m) | 12h | 2019-11-28 12:00 | 2019-11-29 18:00 | 408 | 215d | 0d | Ayudante de obra; Tecnólogo civil | 24h | 180,888 |
| 410 | 1.4.5.4.4.4 | Punto Sifones de 2 " | 2h | 2019-11-29 18:00 | 2019-12-02 10:00 | 409 | 215d | 0d | Ayudante de obra; Tecnólogo civil | 4h | 30,148 |
| 411 | 1.4.5.4.4.5 | Punto Sifones de 3 " | 2h | 2019-12-02 10:00 | 2019-12-02 12:00 | 410 | 215d | 0d | Ayudante de obra; Tecnólogo civil | 4h | 30,148 |
| 412 | 1.4.5.4.4.6 | Rejilla cúpula en aluminio o bronce 5 " x 3 " para terrazas | 2h | 2019-12-02 12:00 | 2019-12-02 16:00 | 411 | 215d | 0d | Ayudante de obra [50%]; Tecnólogo civil [50%] | 2h | 15,074 |
| 413 | 1.4.5.4.4.7 | Tubería sanitaria PVC 4 " incluye accesorios | 12h | 2019-12-02 16:00 | 2019-12-04 10:00 | 412 | 215d | 0d | Ayudante de obra [50%]; Tecnólogo civil [50%] | 12h | 90,444 |
| 414 | 1.4.5.4.4.8 | Tubería sanitaria PVC 3 " incluye accesorios | 12h | 2019-12-04 10:00 | 2019-12-05 16:00 | 413 | 215d | 0d | Ayudante de obra [50%]; Tecnólogo civil [50%] | 12h | 90,444 |
| 415 | 1.4.5.4.4.9 | Tubería sanitaria PVC 2 " incluye accesorios | 12h | 2019-12-05 16:00 | 2019-12-09 10:00 | 414 | 215d | 0d | Ayudante de obra [50%]; Tecnólogo civil [50%] | 12h | 90,444 |
| 416 | 1.4.5.4.4.10 | Tubería de aguas lluvias 3 " , incluye accesorios. | 12h | 2019-12-09 10:00 | 2019-12-10 16:00 | 415 | 215d | 0d | Ayudante de obra [50%]; Tecnólogo civil [50%] | 12h | 90,444 |
| 417 | 1.4.5.4.4.11 | Tubería de aguas lluvias 4 " , incluye accesorios. | 12h | 2019-12-10 16:00 | 2019-12-12 10:00 | 416 | 215d | 0d | Ayudante de obra [50%]; Tecnólogo civil [50%] | 12h | 90,444 |
| 418 | 1.4.5.4.4.12 | Tubería de 2 " de Re ventilación, incluye accesorios. | 12h | 2019-12-12 10:00 | 2019-12-13 16:00 | 417 | 215d | 0d | Ayudante de obra [50%]; Tecnólogo civil [50%] | 12h | 90,444 |
| 419 | 1.4.5.4.4.13 | Tubería alcantarillado corrugado de 6 " tipo Novafort o equivalente, incluye accesorios. | 12h | 2019-12-13 16:00 | 2019-12-17 10:00 | 418 | 215d |  | Ayudante de obra [50%]; Tecnólogo civil [50%] | 12h | 90,444 |
| 420 | 1.4.5.4.5 | **Otras actividades** | 3.75d | 2019-12-17 10:00 | 2019-12-20 18:00 | 406 | 215d |  |  | 30h | 626,110 |
| 421 | 1.4.5.4.5.1 | Trampa de grasas en acero inoxidable, dimensiones L = 0,60, A = 0,40, H = 0,45 cm. Con tapa inspeccionable corrediza. Incluye instalación y accesorios. | 4h | 2019-12-17 10:00 | 2019-12-17 16:00 | 406 | 215d | 0d | Ayudante de obra [50%]; Tecnólogo civil [50%] | 4h | 30,148 |
| 422 | 1.4.5.4.5.2 | Tanque de reserva 1000 litros, plástico tipo Ajover o similar, incluye conexión y accesorios. limpieza y desinfección. | 3d | 2019-12-17 16:00 | 2019-12-20 16:00 | 421 | 215d | 0d | Ayudante de obra [50%]; Grúa telescopica [0.1%]; Tecnólogo civil [50%] | 24h | 580,888 |
| 423 | 1.4.5.4.5.3 | Corte de pavimento rígido (placa piso) | 2h | 2019-12-20 16:00 | 2019-12-20 18:00 | 422 | 215d |  | Ayudante de obra [50%]; Tecnólogo civil [50%] | 2h | 15,074 |
| 424 | 1.4.5.5 | **Sistema contra incendios** | 0.5d | 2019-11-11 18:00 | 2019-11-12 12:00 | 157, 218 | 243.5d |  |  |  | 200,000 |
| 425 | 1.4.5.5.1 | Instalación de tuberías, rociadores, registros y sensores | 2h | 2019-11-11 18:00 | 2019-11-12 10:00 | 157, 218 | 243.5d | 0d | Proveedor sistema red contraincendios [0.1%] |  | 100,000 |
| 426 | 1.4.5.5.2 | Instalación de bomba red contraincendios | 2h | 2019-11-12 10:00 | 2019-11-12 12:00 | 425 | 243.5d |  | Proveedor sistema red contraincendios [0.1%] |  | 100,000 |

| ID | WBS | Task | Duration | Start | Finish | Predecessors | Total slack | Free slack | Resources | Work | Cost |
| --- | --- | --- | --- | --- | --- | --- | --- | --- | --- | --- | --- |
| 427 | 1.4.5.6 | **Circuito cerrado de TV** | 0.5d | 2019-11-11 18:00 | 2019-11-12 12:00 | 162, 222 | 243.5d |  |  |  | 200,000 |
| 428 | 1.4.5.6.1 | Alistamiento de equipos, herramientas y materiales | 2h | 2019-11-11 18:00 | 2019-11-12 10:00 | 162, 222 | 243.5d | 0d | Proveedor de sistemas de alarmas y seguridad [0.1%] |  | 100,000 |
| 429 | 1.4.5.6.2 | Instalación y configuración de equipos | 2h | 2019-11-12 10:00 | 2019-11-12 12:00 | 428 | 243.5d |  | Proveedor de sistemas de alarmas y seguridad [0.1%] |  | 100,000 |
| 430 | 1.4.5.7 | **Iluminación** | 1.5d | 2019-11-11 18:00 | 2019-11-13 12:00 | 166, 226 | 242.5d |  |  | 17h | 209,375 |
| 431 | 1.4.5.7.1 | Instalación de postes y estructuras | 3h | 2019-11-11 18:00 | 2019-11-12 11:00 | 166, 226 | 242.5d | 0d | Ayudante electricista [50%]; Grúa telescopica [0.1%]; Jefe de ingenieria [50%] | 3h | 28,125 |
| 432 | 1.4.5.7.2 | Instalación de luminarias | 4h | 2019-11-12 11:00 | 2019-11-12 17:00 | 431 | 242.5d | 0d | Ayudante electricista [50%]; Grúa telescopica [0.1%]; Jefe de ingenieria [50%] | 4h | 37,500 |
| 433 | 1.4.5.7.3 | Instalación de cableado eléctrico | 5h | 2019-11-12 17:00 | 2019-11-13 12:00 | 432 | 242.5d |  | Ayudante electricista; Grúa telescopica [0.1%]; Jefe de ingenieria | 10h | 143,750 |
| 434 | 1.4.5.8 | **Telecomunicaciones** | 1.12d | 2019-11-11 18:00 | 2019-11-12 19:00 | 169, 229 | 242.88d |  |  |  | 450,000 |
| 435 | 1.4.5.8.1 | Strip telefónico | 2h | 2019-11-11 18:00 | 2019-11-12 10:00 | 169, 229 | 242.88d | 0d | Proveedor cableado y telecomunicaciones [0.1%] |  | 100,000 |
| 436 | 1.4.5.8.2 | Instalación del gabinete de comunicaciones | 1h | 2019-11-12 10:00 | 2019-11-12 11:00 | 435 | 242.88d | 0d | Proveedor cableado y telecomunicaciones [0.1%] |  | 50,000 |
| 437 | 1.4.5.8.3 | Cable multipar 04 pares uso int. | 1h | 2019-11-12 11:00 | 2019-11-12 12:00 | 436 | 242.88d | 0d | Proveedor cableado y telecomunicaciones [0.1%] |  | 50,000 |
| 438 | 1.4.5.8.4 | Caja de paso metálica de 20x20x10cm, Incluye accesorios y elementos de fijación. | 1h | 2019-11-12 12:00 | 2019-11-12 13:00 | 437 | 242.88d | 0d | Proveedor cableado y telecomunicaciones [0.1%] |  | 50,000 |
| 439 | 1.4.5.8.5 | Caja control TV 20x20x10cm, incluye amplificador, accesorios y elementos de fijación. | 1h | 2019-11-12 15:00 | 2019-11-12 16:00 | 438 | 242.88d | 0d | Proveedor cableado y telecomunicaciones [0.1%] |  | 50,000 |
| 440 | 1.4.5.8.6 | Caja para control de sonido de 20x20x10cm, incluye accesorios y elementos de fijación. | 1h | 2019-11-12 16:00 | 2019-11-12 17:00 | 439 | 242.88d | 0d | Proveedor cableado y telecomunicaciones [0.1%] |  | 50,000 |
| 441 | 1.4.5.8.7 | Salida para toma telefónica cable 4 pares. Hasta 7 metros | 1h | 2019-11-12 17:00 | 2019-11-12 18:00 | 440 | 242.88d | 0d | Proveedor cableado y telecomunicaciones [0.1%] |  | 50,000 |
| 442 | 1.4.5.8.8 | Salida para toma TV incluye conectores, aparato y cable RG 59 hasta 7m | 1h | 2019-11-12 18:00 | 2019-11-12 19:00 | 441 | 242.88d |  | Proveedor cableado y telecomunicaciones [0.1%] |  | 50,000 |
| 443 | 1.4.5.9 | **Talanquera de acceso** | 1.38d | 2019-11-11 18:00 | 2019-11-13 11:00 | 172, 231 | 242.62d |  |  | 2h | 274,000 |
| 444 | 1.4.5.9.1 | Instalación de la estructura | 2h | 2019-11-11 18:00 | 2019-11-12 10:00 | 172, 231 | 242.62d | 0d | Proveedor de sistema de control de acceso [0.1%] |  | 100,000 |
| 445 | 1.4.5.9.2 | Instalación de la talanquera | 3h | 2019-11-12 10:00 | 2019-11-12 13:00 | 444 | 242.62d | 0d | Proveedor de sistema de control de acceso [0.1%] |  | 150,000 |
| 446 | 1.4.5.9.3 | Instalación de sensores y actuadores | 4h | 2019-11-12 15:00 | 2019-11-12 19:00 | 445 | 242.62d | 0d | Proveedor de sistema de control de acceso [0.1%]; Tecnólogo electromecánico [50%] | 2h | 24,000 |
| 447 | 1.4.5.9.4 | Instalación de sistema de control | 2h | 2019-11-13 09:00 | 2019-11-13 11:00 | 446 | 242.62d |  | Proveedor de sistema de control de acceso [0.1%] |  |  |
| 448 | 1.5 | **PUESTA EN MARCHA** | 16d | 2020-12-02 17:00 | 2020-12-24 17:00 | 255 | 0.12d |  |  | 346.16h | 5,100,105.53 |
| 449 | 1.5.1 | **Obra Civil** | 16d | 2020-12-02 17:00 | 2020-12-24 17:00 | 256 | 0.12d |  |  | 281.04h | 3,715,926.32 |
| 450 | 1.5.1.1 | Pruebas de calidad obra civil | 7d | 2020-12-02 17:00 | 2020-12-11 17:00 | 256 | 0.12d | 0d | Jefe de calidad [9%]; Jefe de ingenieria [11%]; Residente de obra [25%]; Director de obra [20%] | 36.4h | 591,491.6 |
| 451 | 1.5.1.2 | Pruebas de calidad acabados | 7d | 2020-12-07 17:00 | 2020-12-16 17:00 | 450SS+3d | 6.12d |  | Jefe de calidad [50%]; Jefe de ingenieria [89%]; Residente de obra [75%]; Director de obra [80%] | 164.64h | 2,643,626.72 |
| 452 | 1.5.1.3 | Pruebas de canalizaciones y conductos | 2d | 2020-12-11 17:00 | 2020-12-15 17:00 | 450 | 0.12d | 0d | Jefe de calidad [50%]; Tecnólogo civil | 24h | 308,664 |
| 453 | 1.5.1.4 | Limpieza final de la obra | 7d | 2020-12-15 17:00 | 2020-12-24 17:00 | 452 | 0.12d |  | Ayudante de obra | 56h | 172,144 |

| ID | WBS | Task | Duration | Start | Finish | Predecessors | Total slack | Free slack | Resources | Work | Cost |
| --- | --- | --- | --- | --- | --- | --- | --- | --- | --- | --- | --- |
| 454 | 1.5.2 | **Sistema eléctrico y puesta a tierra** | 1.25d | 2020-12-02 17:00 | 2020-12-03 19:00 | 315 | 14.12d | 0d |  | 7.44h | 119,331.52 |
| 455 | 1.5.2.1 | Prueba de los componentes acorde a especificaciones de fabrica | 4h | 2020-12-02 17:00 | 2020-12-03 11:00 | 315 | 14.12d | 0d | Jefe de calidad [9%]; Jefe de ingenieria [11%]; Residente de obra [25%]; Director de obra [20%] | 2.6h | 42,249.4 |
| 456 | 1.5.2.2 | Prueba de cableado de potencia acorde a especificaciones de fabrica | 2h | 2020-12-03 11:00 | 2020-12-03 13:00 | 455 | 14.12d | 0d | Jefe de calidad [9%]; Jefe de ingenieria [11%]; Residente de obra [25%]; Director de obra [20%] | 1.3h | 21,124.7 |
| 457 | 1.5.2.3 | Pruebas funcionales sin tensión | 2h | 2020-12-03 15:00 | 2020-12-03 17:00 | 456 | 14.12d | 0d | Jefe de calidad [14%]; Jefe de ingenieria [16%]; Residente de obra [37%]; Director de obra [20%] | 1.74h | 27,541.22 |
| 458 | 1.5.2.4 | Pruebas de operación con tensión | 2h | 2020-12-03 17:00 | 2020-12-03 19:00 | 457 | 14.12d |  | Jefe de calidad [14%]; Jefe de ingenieria [19%]; Residente de obra [37%]; Director de obra [20%] | 1.8h | 28,416.2 |
| 459 | 1.5.3 | **Sistema de carrusel** | 1.88d | 2020-12-02 17:00 | 2020-12-04 16:00 | 341 | 14.25d |  |  | 16.02h | 314,809.11 |
| 460 | 1.5.3.1 | Control de calidad del montaje e instalación | 5h | 2020-12-02 17:00 | 2020-12-03 12:00 | 341 | 14.25d | 0d | Jefe de calidad [9%]; Jefe de ingenieria [11%]; Residente de obra [25%]; Director de obra [20%]; Gerente de proyectos [11%] | 3.8h | 80,311.75 |
| 461 | 1.5.3.2 | Pruebas de rotación y movimiento | 2h | 2020-12-03 12:00 | 2020-12-03 16:00 | 460 | 14.25d | 0d | Jefe de calidad [10%]; Jefe de ingenieria [17%]; Residente de obra [25%]; Director de obra [20%]; Gerente de proyectos [11%] | 1.66h | 34,166.32 |
| 462 | 1.5.3.3 | Pruebas de sistema eléctrico | 2h | 2020-12-03 16:00 | 2020-12-03 18:00 | 461 | 14.25d | 0d | Jefe de calidad [14%]; Jefe de ingenieria [16%]; Residente de obra [37%]; Director de obra [20%]; Gerente de proyectos [11%] | 1.88h | 37,374.58 |
| 463 | 1.5.3.4 | Pruebas de sensores y actuadores | 2h | 2020-12-03 18:00 | 2020-12-04 10:00 | 462 | 14.25d | 0d | Jefe de calidad [14%]; Jefe de ingenieria [16%]; Residente de obra [37%]; Director de obra [20%]; Gerente de proyectos [11%] | 1.96h | 38,541.22 |
| 464 | 1.5.3.5 | Pruebas de carga de las plataformas | 2h | 2020-12-04 10:00 | 2020-12-04 12:00 | 463 | 14.25d | 0d | Jefe de calidad [16%]; Jefe de ingenieria [14%]; Residente de obra [75%]; Director de obra [20%]; Gerente de proyectos [11%] | 2.72h | 49,624.3 |
| 465 | 1.5.3.6 | Pruebas de control de acceso y otros componentes | 2h | 2020-12-04 12:00 | 2020-12-04 16:00 | 464 | 14.25d |  | Jefe de calidad [20%]; Jefe de ingenieria [14%]; Residente de obra [75%]; Director de obra [80%]; Gerente de proyectos [11%] | 4h | 74,790.94 |
| 466 | 1.5.4 | **Automatización y control** | 0.75d | 2020-12-02 17:00 | 2020-12-03 13:00 | 359 | 15.38d |  |  | 6.54h | 79,874.82 |
| 467 | 1.5.4.1 | Pruebas en aparatos de medida, sensores y actuadores | 2h | 2020-12-02 17:00 | 2020-12-02 19:00 | 359 | 15.38d | 0d | Jefe de calidad [9%]; Tecnólogo electromecánico | 2.18h | 26,624.94 |
| 468 | 1.5.4.2 | Verificación de sistemas de supervisión y visualización | 2h | 2020-12-03 09:00 | 2020-12-03 11:00 | 467 | 15.38d | 0d | Jefe de calidad [9%]; Tecnólogo electromecánico | 2.18h | 26,624.94 |
| 469 | 1.5.4.3 | Protocolos de puesta en marcha de los equipos | 2h | 2020-12-03 11:00 | 2020-12-03 13:00 | 468 | 15.38d |  | Jefe de calidad [9%]; Tecnólogo electromecánico | 2.18h | 26,624.94 |
| 470 | 1.5.5 | **Sistemas de apoyo** | 2.38d | 2020-12-02 17:00 | 2020-12-07 10:00 | 371 | 13.75d |  |  | 35.12h | 870,163.76 |
| 471 | 1.5.5.1 | **UPS** | 0.5d | 2020-12-04 09:00 | 2020-12-04 13:00 | 454 | 14.38d |  |  | 1.94h | 28,291.02 |
| 472 | 1.5.5.1.1 | Pruebas de la unidad de transferencia | 2h | 2020-12-04 09:00 | 2020-12-04 11:00 | 454 | 14.38d | 0d | Jefe de calidad [16%]; Jefe de ingenieria [25%]; Proveedor de servicios de consultoría en HSEQ [0.1%]; Proveedor de UPS [0.1%] | 0.82h | 11,958.06 |
| 473 | 1.5.5.1.2 | Evaluación de resultados de las pruebas de arranque | 2h | 2020-12-04 11:00 | 2020-12-04 13:00 | 472 | 14.38d |  | Jefe de calidad [20%]; Jefe de ingenieria [36%]; Proveedor de servicios de consultoría en HSEQ [0.1%]; Proveedor de UPS [0.1%] | 1.12h | 16,332.96 |
| 474 | 1.5.5.2 | **Aire acondicionado** | 0.75d | 2020-12-04 09:00 | 2020-12-04 17:00 | 454 | 14.12d |  |  | 9.26h | 72,542.58 |
| 475 | 1.5.5.2.1 | Balanceo de sistema de aire acondicionado | 4h | 2020-12-04 09:00 | 2020-12-04 13:00 | 454 | 14.12d | 0d | Jefe de calidad [16%]; Jefe de ingenieria [25%]; Ayudante electricista | 5.64h | 40,584.12 |
| 476 | 1.5.5.2.2 | Medición de sonido y vibración | 2h | 2020-12-04 15:00 | 2020-12-04 17:00 | 475 | 14.12d |  | Jefe de calidad [20%]; Jefe de ingenieria [61%]; Ayudante electricista | 3.62h | 31,958.46 |
| 477 | 1.5.5.3 | **Cableado estructurado** | 0.62d | 2020-12-02 17:00 | 2020-12-03 12:00 | 371 | 15.5d |  |  | 1h | 14,583 |
| 478 | 1.5.5.3.1 | Verificación del cumplimiento de la norma | 3h | 2020-12-02 17:00 | 2020-12-03 10:00 | 371 | 15.5d | 0d | Jefe de calidad [9%]; Jefe de ingenieria [11%]; Proveedor cableado y telecomunicaciones [0.1%] | 0.6h | 8,749.8 |
| 479 | 1.5.5.3.2 | Control de calidad de la instalación | 2h | 2020-12-03 10:00 | 2020-12-03 12:00 | 478 | 15.5d |  | Jefe de calidad [9%]; Jefe de ingenieria [11%]; Proveedor cableado y telecomunicaciones [0.1%] | 0.4h | 5,833.2 |

| ID | WBS | Task | Duration | Start | Finish | Predecessors | Total slack | Free slack | Resources | Work | Cost |
| --- | --- | --- | --- | --- | --- | --- | --- | --- | --- | --- | --- |
| 480 | 1.5.5.4 | **Sistema hidráulico** | 0.75d | 2020-12-02 17:00 | 2020-12-03 13:00 | 371 | 15.38d |  |  | 3.24h | 53,749.32 |
| 481 | 1.5.5.4.1 | Control de calidad de las instalaciones | 2h | 2020-12-02 17:00 | 2020-12-02 19:00 | 371 | 15.38d | 0d | Director de obra [20%]; Jefe de calidad [9%]; Residente de obra [25%] | 1.08h | 17,916.44 |
| 482 | 1.5.5.4.2 | Pruebas de presión red hidráulica. | 2h | 2020-12-03 09:00 | 2020-12-03 11:00 | 481 | 15.38d | 0d | Director de obra [20%]; Jefe de calidad [9%]; Residente de obra [25%] | 1.08h | 17,916.44 |
| 483 | 1.5.5.4.3 | Pruebas de estanqueidad red sanitaria | 2h | 2020-12-03 11:00 | 2020-12-03 13:00 | 482 | 15.38d |  | Director de obra [20%]; Jefe de calidad [9%]; Residente de obra [25%] | 1.08h | 17,916.44 |
| 484 | 1.5.5.5 | **Sistema contra incendios** | 1.12d | 2020-12-02 17:00 | 2020-12-03 18:00 | 371 | 15d |  |  | 2.14h | 31,207.62 |
| 485 | 1.5.5.5.1 | Control de calidad de las instalaciones | 5h | 2020-12-02 17:00 | 2020-12-03 12:00 | 371 | 15d | 0d | Jefe de calidad [9%]; Jefe de ingenieria [11%]; Proveedor sistema red contraincendios [0.1%] | 1h | 14,583 |
| 486 | 1.5.5.5.2 | Pruebas de rociadores | 2h | 2020-12-03 12:00 | 2020-12-03 16:00 | 485 | 15d | 0d | Jefe de calidad [10%]; Jefe de ingenieria [17%]; Proveedor sistema red contraincendios [0.1%] | 0.54h | 7,874.82 |
| 487 | 1.5.5.5.3 | Pruebas de actuadores y sensores | 2h | 2020-12-03 16:00 | 2020-12-03 18:00 | 486 | 15d |  | Jefe de calidad [14%]; Jefe de ingenieria [16%]; Proveedor sistema red contraincendios [0.1%] | 0.6h | 8,749.8 |
| 488 | 1.5.5.6 | **Circuito cerrado de TV** | 2.38d | 2020-12-02 17:00 | 2020-12-07 10:00 | 371 | 13.75d |  |  | 4.44h | 104,748.52 |
| 489 | 1.5.5.6.1 | Control de calidad de las instalaciones | 1h | 2020-12-02 17:00 | 2020-12-02 18:00 | 371 | 13.75d | 0d | Jefe de calidad [9%]; Jefe de ingenieria [11%]; Proveedor de sistemas de alarmas y seguridad [0.1%] | 0.2h | 2,916.6 |
| 490 | 1.5.5.6.2 | Pruebas funcionales de cámaras, DVR y pantallas | 2h | 2020-12-02 18:00 | 2020-12-03 10:00 | 489 | 13.75d | 0d | Jefe de calidad [9%]; Jefe de ingenieria [11%]; Proveedor de sistemas de alarmas y seguridad [0.1%] | 0.4h | 5,833.2 |
| 491 | 1.5.5.6.3 | Pruebas de grabación de video | 1d | 2020-12-03 10:00 | 2020-12-04 10:00 | 490 | 13.75d | 0d | Jefe de calidad [9%]; Jefe de ingenieria [11%]; Proveedor de sistemas de alarmas y seguridad [0.1%] | 1.6h | 23,332.8 |
| 492 | 1.5.5.6.4 | Pruebas de software de administración del sistema | 1d | 2020-12-04 10:00 | 2020-12-07 10:00 | 491 | 13.75d |  | Jefe de calidad [14%]; Jefe de ingenieria [14%]; Proveedor de sistemas de alarmas y seguridad [0.1%] | 2.24h | 72,665.92 |
| 493 | 1.5.5.7 | **Iluminación** | 0.75d | 2020-12-02 17:00 | 2020-12-03 13:00 | 371 | 15.38d |  |  | 8.4h | 366,501.6 |
| 494 | 1.5.5.7.1 | Control de calidad de las instalaciones | 2h | 2020-12-02 17:00 | 2020-12-02 19:00 | 371 | 15.38d | 0d | Ayudante electricista; Director de obra [20%]; Grúa telescopica [0.1%]; Jefe de calidad [9%]; Jefe de ingenieria [11%] | 2.8h | 122,167.2 |
| 495 | 1.5.5.7.2 | Medición de iluminación | 2h | 2020-12-03 09:00 | 2020-12-03 11:00 | 494 | 15.38d | 0d | Ayudante electricista; Director de obra [20%]; Grúa telescopica [0.1%]; Jefe de calidad [9%]; Jefe de ingenieria [11%] | 2.8h | 122,167.2 |
| 496 | 1.5.5.7.3 | Pruebas de calidad de postes y estructuras | 2h | 2020-12-03 11:00 | 2020-12-03 13:00 | 495 | 15.38d |  | Ayudante electricista; Director de obra [20%]; Grúa telescopica [0.1%]; Jefe de calidad [9%]; Jefe de ingenieria [11%] | 2.8h | 122,167.2 |
| 497 | 1.5.5.8 | **Telecomunicaciones** | 1.25d | 2020-12-02 17:00 | 2020-12-03 19:00 | 371 | 14.88d |  |  | 2.3h | 103,540.9 |
| 498 | 1.5.5.8.1 | Control de calidad de las instalaciones | 2h | 2020-12-02 17:00 | 2020-12-02 19:00 | 371 | 14.88d | 0d | Jefe de calidad [9%]; Jefe de ingenieria [11%]; Proveedor cableado y telecomunicaciones [0.1%] | 0.4h | 19,833.2 |
| 499 | 1.5.5.8.2 | Pruebas de navegación a Internet | 5h | 2020-12-03 09:00 | 2020-12-03 16:00 | 498 | 14.88d | 0d | Jefe de calidad [9%]; Jefe de ingenieria [11%]; Proveedor cableado y telecomunicaciones [0.1%] | 1h | 49,583 |
| 500 | 1.5.5.8.3 | Pruebas de telefonía | 2h | 2020-12-03 16:00 | 2020-12-03 18:00 | 499 | 14.88d | 0d | Jefe de calidad [14%]; Jefe de ingenieria [16%]; Proveedor cableado y telecomunicaciones [0.1%] | 0.6h | 22,749.8 |
| 501 | 1.5.5.8.4 | Pruebas de comunicación entre los sistemas enlazados | 1h | 2020-12-03 18:00 | 2020-12-03 19:00 | 500 | 14.88d |  | Jefe de calidad [14%]; Jefe de ingenieria [16%]; Proveedor cableado y telecomunicaciones [0.1%] | 0.3h | 11,374.9 |
| 502 | 1.5.5.9 | **Talanquera de acceso** | 1.5d | 2020-12-02 17:00 | 2020-12-04 11:00 | 371 | 14.62d |  |  | 2.4h | 94,999.2 |
| 503 | 1.5.5.9.1 | Control de calidad de las instalaciones | 2h | 2020-12-02 17:00 | 2020-12-02 19:00 | 371 | 14.62d | 0d | Jefe de calidad [9%]; Jefe de ingenieria [11%]; Proveedor de sistema de control de acceso [0.1%] | 0.4h | 15,833.2 |
| 504 | 1.5.5.9.2 | Pruebas de funcionamiento de los sensores y actuadores | 2h | 2020-12-03 09:00 | 2020-12-03 11:00 | 503 | 14.62d | 0d | Jefe de calidad [9%]; Jefe de ingenieria [11%]; Proveedor de sistema de control de acceso [0.1%] | 0.4h | 15,833.2 |
| 505 | 1.5.5.9.3 | Pruebas funcionales de la talanquera | 1d | 2020-12-03 11:00 | 2020-12-04 11:00 | 504 | 14.62d |  | Jefe de calidad [9%]; Jefe de ingenieria [11%]; Proveedor de sistema de control de acceso [0.1%] | 1.6h | 63,332.8 |

| ID | WBS | Task | Duration | Start | Finish | Predecessors | Total slack | Free slack | Resources | Work | Cost |
| --- | --- | --- | --- | --- | --- | --- | --- | --- | --- | --- | --- |
| 506 | 1.6 | **GERENCIA DE PROYECTO** | 524.88d | 2019-01-02 09:00 | 2021-01-05 18:00 |  | 0d |  |  | 4134.24h | 151,872,968 |
| 507 | 1.6.1 | **Inicio** | 30d | 2019-01-02 09:00 | 2019-02-12 19:00 |  | 0.12d | 0d |  | 240h | 12,012,192 |
| 508 | 1.6.1.1 | Acta de constitución del proyecto | 2d | 2019-01-02 09:00 | 2019-01-03 19:00 |  | 0.12d | 0d | Gerente de proyectos; Equipos celulares [300%]; Equipos de cómputo [300%]; Sistema operativo [300%]; Microsoft office [300%] | 16h | 801,524 |
| 509 | 1.6.1.2 | Enunciado del alcance del proyecto | 5d | 2019-01-04 09:00 | 2019-01-10 19:00 | 508 | 0.12d | 0d | Gerente de proyectos; Equipos celulares [300%]; Equipos de cómputo [300%]; Sistema operativo [300%]; Microsoft office [300%] | 40h | 2,001,524 |
| 510 | 1.6.1.3 | Lista de actividades del proyecto | 3d | 2019-01-11 09:00 | 2019-01-15 19:00 | 509 | 0.12d | 0d | Gerente de proyectos; Equipos celulares [300%]; Equipos de cómputo [300%]; Sistema operativo [300%]; Microsoft office [300%] | 24h | 1,201,524 |
| 511 | 1.6.1.4 | Recursos | 3d | 2019-01-16 09:00 | 2019-01-18 19:00 | 510 | 0.12d | 0d | Gerente de proyectos; Equipos celulares [300%]; Equipos de cómputo [300%]; Sistema operativo [300%]; Microsoft office [300%] | 24h | 1,201,524 |
| 512 | 1.6.1.5 | Estimar duración de actividades | 4d | 2019-01-21 09:00 | 2019-01-24 19:00 | 511 | 0.12d | 0d | Gerente de proyectos; Equipos celulares [300%]; Equipos de cómputo [300%]; Sistema operativo [300%]; Microsoft office [300%] | 32h | 1,601,524 |
| 513 | 1.6.1.6 | Estimar costos de actividades | 5d | 2019-01-25 09:00 | 2019-01-31 19:00 | 512 | 0.12d | 0d | Gerente de proyectos; Equipos celulares [300%]; Equipos de cómputo [300%]; Sistema operativo [300%]; Microsoft office [300%] | 40h | 2,001,524 |
| 514 | 1.6.1.7 | Registro de riesgos | 5d | 2019-02-01 09:00 | 2019-02-07 19:00 | 513 | 0.12d | 0d | Gerente de proyectos; Equipos celulares [300%]; Equipos de cómputo [300%]; Sistema operativo [300%]; Microsoft office [300%] | 40h | 2,001,524 |
| 515 | 1.6.1.8 | Planificar la gestión de los interesados | 3d | 2019-02-08 09:00 | 2019-02-12 19:00 | 514 | 0.12d | 0d | Gerente de proyectos; Equipos celulares [300%]; Equipos de cómputo [300%]; Sistema operativo [300%]; Microsoft office [300%] | 24h | 1,201,524 |
| 516 | 1.6.2 | **Planeación** | 50d | 2019-02-13 09:00 | 2019-04-23 19:00 | 507 | 0.12d | 0d |  | 400h | 20,015,240 |
| 517 | 1.6.2.1 | Gestión de integración | 5d | 2019-02-13 09:00 | 2019-02-19 19:00 | 515 | 0.12d | 0d | Gerente de proyectos; Equipos celulares [300%]; Equipos de cómputo [300%]; Sistema operativo [300%]; Microsoft office [300%] | 40h | 2,001,524 |
| 518 | 1.6.2.2 | Gestión de alcance | 5d | 2019-02-20 09:00 | 2019-02-26 19:00 | 517 | 0.12d | 0d | Gerente de proyectos; Equipos celulares [300%]; Equipos de cómputo [300%]; Sistema operativo [300%]; Microsoft office [300%] | 40h | 2,001,524 |
| 519 | 1.6.2.3 | Gestión del tiempo | 5d | 2019-02-27 09:00 | 2019-03-05 19:00 | 518 | 0.12d | 0d | Gerente de proyectos; Equipos celulares [300%]; Equipos de cómputo [300%]; Sistema operativo [300%]; Microsoft office [300%] | 40h | 2,001,524 |
| 520 | 1.6.2.4 | Gestión del costo | 5d | 2019-03-06 09:00 | 2019-03-12 19:00 | 519 | 0.12d | 0d | Gerente de proyectos; Equipos celulares [300%]; Equipos de cómputo [300%]; Sistema operativo [300%]; Microsoft office [300%] | 40h | 2,001,524 |
| 521 | 1.6.2.5 | Gestión de calidad | 5d | 2019-03-13 09:00 | 2019-03-19 19:00 | 520 | 0.12d | 0d | Gerente de proyectos; Equipos celulares [300%]; Equipos de cómputo [300%]; Sistema operativo [300%]; Microsoft office [300%] | 40h | 2,001,524 |
| 522 | 1.6.2.6 | Gestión de recurso humano | 5d | 2019-03-20 09:00 | 2019-03-26 19:00 | 521 | 0.12d | 0d | Gerente de proyectos; Equipos celulares [300%]; Equipos de cómputo [300%]; Sistema operativo [300%]; Microsoft office [300%] | 40h | 2,001,524 |
| 523 | 1.6.2.7 | Gestión de comunicaciones | 5d | 2019-03-27 09:00 | 2019-04-02 19:00 | 522 | 0.12d | 0d | Gerente de proyectos; Equipos celulares [300%]; Equipos de cómputo [300%]; Sistema operativo [300%]; Microsoft office [300%] | 40h | 2,001,524 |
| 524 | 1.6.2.8 | Gestión de riesgos | 5d | 2019-04-03 09:00 | 2019-04-09 19:00 | 523 | 0.12d | 0d | Gerente de proyectos; Equipos celulares [300%]; Equipos de cómputo [300%]; Sistema operativo [300%]; Microsoft office [300%] | 40h | 2,001,524 |
| 525 | 1.6.2.9 | Gestión de adquisiciones | 5d | 2019-04-10 09:00 | 2019-04-16 19:00 | 524 | 0.12d | 0d | Gerente de proyectos; Equipos celulares [300%]; Equipos de cómputo [300%]; Sistema operativo [300%]; Microsoft office [300%] | 40h | 2,001,524 |
| 526 | 1.6.2.10 | Gestión de interesados | 5d | 2019-04-17 09:00 | 2019-04-23 19:00 | 525 | 0.12d |  | Gerente de proyectos; Equipos celulares [300%]; Equipos de cómputo [300%]; Sistema operativo [300%]; Microsoft office [300%] | 40h | 2,001,524 |
| 527 | 1.6.3 | **Ejecución** | 436.88d | 2019-04-24 09:00 | 2020-12-24 18:00 | 175SS, 516 | 0d |  |  | 2079.36h | 49,074,104 |
| 528 | 1.6.3.1 | Dirigir y gestionar el trabajo del proyecto (Entregables/datos de desempeño). | 293d | 2019-11-11 18:00 | 2020-12-24 18:00 | 255SS, 526 | 0d |  | Gerente de proyectos [6%]; Equipos celulares [300%]; Equipos de cómputo [300%]; Sistema operativo [300%]; Microsoft office [300%] | 140.64h | 7,033,524 |
| 529 | 1.6.3.2 | Línea base de alcance | 7d | 2019-11-11 18:00 | 2019-11-20 18:00 | 528SS | 272d | 0d | Gerente de proyectos [6%]; Director de obra; Equipos celulares [300%]; Equipos de cómputo [300%]; Sistema operativo [300%]; Microsoft office [300%] | 59.36h | 1,289,524 |
| 530 | 1.6.3.3 | Cronograma del proyecto | 7d | 2019-11-20 18:00 | 2019-11-29 18:00 | 529 | 272d | 0d | Gerente de proyectos [6%]; Equipos celulares [300%]; Equipos de cómputo [300%]; Sistema operativo [300%]; Microsoft office [300%] | 3.36h | 169,524 |
| 531 | 1.6.3.4 | Línea base de costos | 7d | 2019-11-29 18:00 | 2019-12-10 18:00 | 530 | 272d |  | Gerente de proyectos [6%]; Director administrativo; Equipos celulares [300%]; Equipos de cómputo [300%]; Sistema operativo [300%]; Microsoft office [300%] | 59.36h | 1,569,524 |
| 532 | 1.6.3.5 | Realizar aseguramiento de la calidad | 108d | 2019-11-11 18:00 | 2020-04-09 18:00 | 528SS | 185d |  | Gerente de proyectos [6%]; Jefe de calidad; Equipos celulares [300%]; Equipos de cómputo [300%]; Sistema operativo [300%]; Microsoft office [300%] | 915.84h | 15,193,236 |
| 533 | 1.6.3.6 | Adquirir el equipo del proyecto | 60d | 2019-11-11 18:00 | 2020-02-03 18:00 | 528SS | 140d | 0d | Jefe de talento humano; Equipos celulares [300%]; Equipos de cómputo [300%]; Sistema operativo [300%]; Microsoft office [300%] | 480h | 7,001,364 |
| 534 | 1.6.3.7 | Desarrollar el equipo del proyecto | 8d | 2020-02-03 18:00 | 2020-02-13 18:00 | 533 | 140d | 0d | Gerente de proyectos [7%]; Jefe de talento humano; Equipos celulares [300%]; Equipos de cómputo [300%]; Sistema operativo [300%]; Microsoft office [300%] | 68.48h | 1,158,836 |
| 535 | 1.6.3.8 | Dirigir el equipo del proyecto | 85d | 2020-02-13 18:00 | 2020-06-11 18:00 | 534 | 140d |  | Gerente de proyectos [7%]; Equipos celulares [300%]; Equipos de cómputo [300%]; Sistema operativo [300%]; Microsoft office [300%] | 47.6h | 2,381,524 |
| 536 | 1.6.3.9 | Gestionar las comunicaciones | 108d | 2019-11-11 18:00 | 2020-04-09 18:00 | 528SS | 185d |  | Gerente de proyectos [6%]; Equipos celulares [300%]; Equipos de cómputo [300%]; Sistema operativo [300%]; Microsoft office [300%] | 51.84h | 2,593,524 |
| 537 | 1.6.3.10 | Efectuar las adquisiciones | 109d | 2019-04-24 09:00 | 2019-09-23 19:00 | 175SS | 327.88d |  | Gerente de proyectos [20%]; Director administrativo [9%]; Equipos celulares [300%]; Equipos de cómputo [300%]; Sistema operativo [300%]; Microsoft office [300%] | 252.88h | 10,683,524 |

| ID | WBS | Task | Duration | Start | Finish | Predecessors | Total slack | Resources | Work | Cost |
| --- | --- | --- | --- | --- | --- | --- | --- | --- | --- | --- |
| 538 | 1.6.4 | **Monitoreo y control** | 376.88d | 2019-07-17 09:00 | 2020-12-24 18:00 | 2SS | 0d |  | 1350.88h | 67,563,812 |
| 539 | 1.6.4.1 | Monitorear y controlar el trabajo del proyecto | 293d | 2019-11-11 18:00 | 2020-12-24 18:00 | 528SS | 0d | Gerente de proyectos [6%]; Equipos celulares [300%]; Equipos de cómputo [300%]; Sistema operativo [300%]; Microsoft office [300%] | 140.64h | 7,033,524 |
| 540 | 1.6.4.2 | Realizar el control integrado de cambios | 290d | 2019-11-11 18:00 | 2020-12-21 18:00 | 539SS | 3d | Gerente de proyectos [6%]; Equipos celulares [300%]; Equipos de cómputo [300%]; Sistema operativo [300%]; Microsoft office [300%] | 139.2h | 6,961,524 |
| 541 | 1.6.4.3 | Validar el alcance | 200d | 2019-11-11 18:00 | 2020-08-17 18:00 | 539SS | 93d | Gerente de proyectos [6%]; Equipos celulares [300%]; Equipos de cómputo [300%]; Sistema operativo [300%]; Microsoft office [300%] | 96h | 4,801,524 |
| 542 | 1.6.4.4 | Controlar el alcance | 292d | 2019-11-11 18:00 | 2020-12-23 18:00 | 539SS | 1d | Gerente de proyectos [6%]; Equipos celulares [300%]; Equipos de cómputo [300%]; Sistema operativo [300%]; Microsoft office [300%] | 140.16h | 7,009,524 |
| 543 | 1.6.4.5 | Controlar el cronograma | 290d | 2019-11-11 18:00 | 2020-12-21 18:00 | 539SS | 3d | Gerente de proyectos [6%]; Equipos celulares [300%]; Equipos de cómputo [300%]; Sistema operativo [300%]; Microsoft office [300%] | 139.2h | 6,961,524 |
| 544 | 1.6.4.6 | Controlar los costos | 290d | 2019-11-11 18:00 | 2020-12-21 18:00 | 539SS | 3d | Gerente de proyectos [6%]; Equipos celulares [300%]; Equipos de cómputo [300%]; Sistema operativo [300%]; Microsoft office [300%] | 139.2h | 6,961,524 |
| 545 | 1.6.4.7 | Controlar la calidad | 290d | 2019-11-11 18:00 | 2020-12-21 18:00 | 539SS | 3d | Gerente de proyectos [6%]; Equipos celulares [300%]; Equipos de cómputo [300%]; Sistema operativo [300%]; Microsoft office [300%] | 139.2h | 6,961,524 |
| 546 | 1.6.4.8 | Asignar el personal | 30d | 2019-11-11 18:00 | 2019-12-23 18:00 | 539SS | 263d | Gerente de proyectos [6%]; Equipos celulares [300%]; Equipos de cómputo [300%]; Sistema operativo [300%]; Microsoft office [300%] | 14.4h | 721,524 |
| 547 | 1.6.4.9 | Evaluaciones de desempeño del equipo | 108d | 2019-11-11 18:00 | 2020-04-09 18:00 | 539SS | 185d | Gerente de proyectos [6%]; Equipos celulares [300%]; Equipos de cómputo [300%]; Sistema operativo [300%]; Microsoft office [300%] | 51.84h | 2,593,524 |
| 548 | 1.6.4.10 | Controlar las comunicaciones | 290d | 2019-11-11 18:00 | 2020-12-21 18:00 | 539SS | 3d | Gerente de proyectos [6%]; Equipos celulares [300%]; Equipos de cómputo [300%]; Sistema operativo [300%]; Microsoft office [300%] | 139.2h | 6,961,524 |
| 549 | 1.6.4.11 | Acuerdos | 30d | 2019-07-17 09:00 | 2019-08-27 19:00 | 175SS | 346.88d | Gerente de proyectos [25%]; Equipos celulares [300%]; Equipos de cómputo [300%]; Sistema operativo [300%]; Microsoft office [300%] | 60h | 3,001,524 |
| 550 | 1.6.4.12 | Controlar adquisiciones | 50d | 2019-07-17 09:00 | 2019-09-24 19:00 |  | 326.88d | Gerente de proyectos [25%]; Equipos celulares [300%]; Equipos de cómputo [300%]; Sistema operativo [300%]; Microsoft office [300%] | 100h | 5,001,524 |
| 551 | 1.6.4.13 | Controlar la participación de los interesados | 108d | 2019-11-11 18:00 | 2020-04-09 18:00 | 539SS | 185d | Gerente de proyectos [6%]; Equipos celulares [300%]; Equipos de cómputo [300%]; Sistema operativo [300%]; Microsoft office [300%] | 51.84h | 2,593,524 |
| 552 | 1.6.5 | **Cierre** | 8d | 2020-12-24 18:00 | 2021-01-05 18:00 | 527, 538, 516, 507, 448 | 0d |  | 64h | 3,207,620 |
| 553 | 1.6.5.1 | Acta de recibo final obra civil | 3d | 2020-12-24 18:00 | 2020-12-29 18:00 | 527, 538, 255FF, 227FF, 448FF | 0d | Gerente de proyectos; Equipos celulares [300%]; Equipos de cómputo [300%]; Sistema operativo [300%]; Microsoft office [300%] | 24h | 1,201,524 |
| 554 | 1.6.5.2 | Certificación RETIE y RETILAP | 1d | 2020-12-29 18:00 | 2020-12-30 18:00 | 553 | 0d | Gerente de proyectos; Equipos celulares [300%]; Equipos de cómputo [300%]; Sistema operativo [300%]; Microsoft office [300%] | 8h | 401,524 |
| 555 | 1.6.5.3 | Acta de recibo del Carrusel | 2d | 2020-12-30 18:00 | 2021-01-01 18:00 | 554 | 0d | Gerente de proyectos; Equipos celulares [300%]; Equipos de cómputo [300%]; Sistema operativo [300%]; Microsoft office [300%] | 16h | 801,524 |
| 556 | 1.6.5.4 | Acta de recibo de automatización | 1d | 2021-01-01 18:00 | 2021-01-04 18:00 | 555 | 0d | Gerente de proyectos; Equipos celulares [300%]; Equipos de cómputo [300%]; Sistema operativo [300%]; Microsoft office [300%] | 8h | 401,524 |
| 557 | 1.6.5.5 | Actas de recibo sistemas de apoyo | 1d | 2021-01-04 18:00 | 2021-01-05 18:00 | 556 | 0d | Gerente de proyectos; Equipos celulares [300%]; Equipos de cómputo [300%]; Sistema operativo [300%]; Microsoft office [300%] | 8h | 401,524 |
